How a schedule from GanttProject changed from version to version. A marks actual dates.

## Version 1 (saved 2017-03-28)

Note of the change: Base

| ID | WBS | Task | Duration | Start | Finish | Complete |
| --- | --- | --- | --- | --- | --- | --- |
| 1 | 1 | **Project** | 224d | 2017-01-11 | 2017-08-22 | 83% |
| 2 | 1.1 | **SPL-A1 M.5/D.3** | 31d | 2017-01-18 | 2017-02-17 | 100% |
| 3 |  | Integrate audio and IPU ACPI tables into the guest ACPI tables for SPL A1 | 2d | 2017-02-01 | 2017-02-02 | 100% |
| 4 |  | Increase memory allocated for VM1. | 1d | 2017-01-24 | 2017-01-24 | 100% |
| 5 |  | Evaluate/Integrate patch provided by ABU for the TSC issue | 1d | 2017-02-03 | 2017-02-03 | 100% |
| 6 | 1.1.4 | **Development Drops** | 26d | 2017-01-23 | 2017-02-17 | 100% |
| 7 |  | MEHV internal release 1.3 | 1d | 2017-01-23 | 2017-01-23 | 100% |
| 8 |  | MEHV internal release 1.4 | 2d | 2017-01-26 | 2017-01-27 | 100% |
| 9 |  | MEHV internal release 1.5 | 1d | 2017-02-02 | 2017-02-02 | 100% |
| 10 |  | MEHV internal release 1.6 | 1d | 2017-02-08 | 2017-02-08 | 100% |
| 11 |  | MEHV internal release 1.7 | 1d | 2017-02-17 | 2017-02-17 | 100% |
| 12 | 1.1.5 | **Boot Time Optimizations** | 11d | 2017-02-07 | 2017-02-17 | 100% |
| 13 |  | Measure boot time | 11d | 2017-02-07 | 2017-02-17 | 100% |
| 14 |  | Try delayed GTT initialization with i915.tsd_init | 3d | 2017-02-13 | 2017-02-15 | 100% |
| 15 |  | Optimize delays observed during boot time on VM0 and VM1 | 7d | 2017-02-09 | 2017-02-15 | 100% |
| 16 | 1.1.6 | **CPU Performance** | 20d | 2017-01-20 | 2017-02-08 | 100% |
| 17 |  | Run CPU benchmarks and tune performance on guest virtual machines. | 20d | 2017-01-20 | 2017-02-08 | 100% |
| 18 |  | Remove rdtsc virtualization and use tsc offsetting instead for offsetting boot time bias | 1d | 2017-01-30 | 2017-01-30 | 100% |
| 19 | 1.1.7 | **Bugs** | 29d | 2017-01-18 | 2017-02-15 | 100% |
| 20 |  | TSC frequency should be calculated properly | 6d | 2017-02-09 | 2017-02-14 | 100% |
| 21 |  | VM life cycle management should be char-device based rather than syscall based | 7d | 2017-02-08 | 2017-02-14 | 100% |
| 22 |  | Investigate and fix kernel timer issues on VM1 and VM0 (if there are issues observed on VM0) | 15d | 2017-01-19 | 2017-02-02 | 100% |
| 23 |  | Update CS for APs using value from ICR. | 4d | 2017-01-20 | 2017-01-23 | 100% |
| 24 |  | i2c driver fails on VM0 | 1d | 2017-01-24 | 2017-01-24 | 100% |
| 25 |  | VM1 unable to boot with multiple cpus when ACPI enabled | 2d | 2017-01-18 | 2017-01-19 | 100% |
| 26 |  | Preemption Timer Interrupt hitting earlier than configured period | 2d | 2017-01-26 | 2017-01-27 | 100% |
| 27 | 1.1.7.8 | **Foreground bug** | 7d | 2017-02-09 | 2017-02-15 | 100% |
| 28 |  | Sync signal needed between VM1 and VM0 to set foreground | 5d | 2017-02-09 | 2017-02-13 | 100% |
| 29 |  | Workaround for set foreground bug | 5d | 2017-02-10 | 2017-02-14 | -100% |
| 30 |  | Integrate Intel's fix for set foreground bug | 3d | 2017-02-13 | 2017-02-15 | -100% |
| 31 | 1.1.7.9 | **Console Logs analysis** | 3d | 2017-02-07 | 2017-02-09 | 100% |
| 32 |  | Analyze console logs between XenGT Vs MEHV and qualify the nature of graphics related errors and warnings | 3d | 2017-02-07 | 2017-02-09 | 100% |
| 33 |  | Investigate why atomic warning is observed when nuclear_pageflip is disabled: | 3d | 2017-02-07 | 2017-02-09 | 100% |
| 34 | 1.2 | **SPL-A2 M.6/D.4** | 44d | 2017-02-14 | 2017-03-29 | 94% |
| 35 | 1.2.1 | **Boot Time Optimizations** | 30d | 2017-02-19 | 2017-03-20 | 100% |
| 36 |  | Optimize delays observed during boot time on VM0 and VM1 | 12d | 2017-02-19 | 2017-03-02 | -100% |
| 37 |  | Eliminate hypercall at end of vgt emulation thread completion | 14d | 2017-03-07 | 2017-03-20 | 100% |
| 38 |  | Investigate necessity and overhead of HVM Loader. | 1d | 2017-02-28 | 2017-02-28 | 100% |
| 39 |  | Determine cause of 6.5 second delay during VM1 boot | 18d | 2017-02-28 | 2017-03-17 | -100% |
| 40 |  | Remove HVM loader and boot VM1 in parallel to VM0 | 1d | 2017-02-28 | 2017-02-28 | 100% |
| 41 |  | Verify Clydes Patches for early vgt instance creation on neusoft | 5d | 2017-03-06 | 2017-03-10 | 100% |
| 42 |  | Verify Clydes Patch for NFS timeout and do boottime analysis | 1d | 2017-03-13 | 2017-03-13 | 100% |
| 43 | 1.2.2 | **Enable support for POC 5** | 13d | 2017-02-24 | 2017-03-08 | 100% |
| 44 |  | POC 5 – 02/24 | 6d | 2017-02-24 | 2017-03-01 | -100% |
| 45 |  | Enable GVT-g from POC 5 on MRB | 1d | 2017-03-08 | 2017-03-08 | 100% |
| 46 | 1.2.3 | **MEHV for GP 1.0.1 and ABL 1651** | 23d | 2017-02-20 | 2017-03-14 | 100% |
| 47 |  | GP 1.0.1 (ABU) | 18d | 2017-02-20 | 2017-03-09 | -100% |
| 48 |  | ABL 1651 from ABU | 1d | 2017-02-20 | 2017-02-20 | -100% |
| 49 |  | Enable GP 1.0.1 on Neusoft hardware | 13d | 2017-03-02 | 2017-03-14 | 100% |
| 50 |  | Enable ABL 1651 on Neusoft hardware | 1d | 2017-02-21 | 2017-02-21 | -100% |
| 51 | 1.2.4 | **Development Drops** | 27d | 2017-03-02 | 2017-03-28 | 100% |
| 52 |  | MEHV internal release 1.6.1 | 1d | 2017-03-16 | 2017-03-16 | -100% |
| 53 |  | Custom MEHV 1.6.1 build modified ACPI | 1d | 2017-03-28 | 2017-03-28 | -100% |
| 54 |  | MEHV internal release 1.8 | 1d | 2017-03-02 | 2017-03-02 | -100% |
| 55 |  | MEHV internal release 2.0 | 2d | 2017-03-14 | 2017-03-15 | -100% |
| 56 |  | MEHV internal release 2.1 | 1d | 2017-03-28 | 2017-03-28 | -100% |
| 57 | 1.2.5 | **Misc** | 36d | 2017-02-22 | 2017-03-29 | 56% |
| 58 |  | Automate kernel entry address update in guests.cfg | 5d | 2017-03-10 | 2017-03-14 | -100% |
| 59 |  | GPU benchmarks SPLA-1 release | 1d | 2017-03-07 | 2017-03-07 | 100% |
| 60 |  | Allocate ample memory for ACPI tables to remove need for manual fixup on medications to ACPI tables | 1d | 2017-02-22 | 2017-02-22 | -100% |
| 61 |  | Hypervisor documentation updates | 2d | 2017-03-28 | 2017-03-29 |  |
| 62 | 1.2.6 | **Bugs** | 43d | 2017-02-14 | 2017-03-28 | 94% |
| 63 |  | Crash with MEHV 2.0 after following command "echo l > /proc/sysrq-trigger" | 1d | 2017-03-28 | 2017-03-28 | -100% |
| 64 |  | POC5 kernel bring-up: EPT violation | 1d | 2017-03-08 | 2017-03-08 | -100% |
| 65 |  | SPI device /dev/spi0.0 does not come up in Cluster VM. | 12d | 2017-03-03 | 2017-03-14 | 100% |
| 66 |  | Display artifacts on IVI display on Neusoft hardware | 1d | 2017-03-03 | 2017-03-03 | 100% |
| 67 |  | Improve MEHV char dev implementation. | 8d | 2017-03-02 | 2017-03-09 | 100% |
| 68 |  | Investigate why MEHV guest CPU performance is slower than Xen | 14d | 2017-02-28 | 2017-03-13 | -100% |
| 69 | 1.2.6.7 | **Reboot Issues** | 42d | 2017-02-14 | 2017-03-27 | 89% |
| 70 |  | IVI VM is not able to reboot itself | 18d | 2017-02-14 | 2017-03-03 | 100% |

| ID | WBS | Task | Duration | Start | Finish | Complete |
| --- | --- | --- | --- | --- | --- | --- |
| 71 |  | Reboot of Cluster VM does not reboot IVI VM | 10d | 2017-03-15 | 2017-03-24 | 75% |
| 72 |  | Verify vm reboot use cases | 1d | 2017-03-27 | 2017-03-27 | -100% |
| 73 |  | remove ADV7481A and ADV7481B from ACPI Tables | 1d | 2017-02-21 | 2017-02-21 | -100% |
| 74 |  | inconvenient choice of hypervisor hotkey | 3d | 2017-02-28 | 2017-03-02 | 100% |
| 75 |  | i2c busses in hypervisor | 1d | 2017-02-28 | 2017-02-28 | -100% |
| 76 |  | hypervisor kernel header file Non-GPL again | 1d | 2017-02-27 | 2017-02-27 | -100% |
| 77 |  | Writing to a i2c device on VM1 after creating a vgt instance on VM0 crashes both the VM0 and VM1 | 8d | 2017-02-27 | 2017-03-06 | -100% |
| 78 |  | Interrupts --Some of the device interrupts are NOT being delivered to CPU1 and CPU2 in VM1 | 1d | 2017-03-20 | 2017-03-20 | -100% |
| 79 |  | MMC1 timeout message on Linux console with Intel beta release | 2d | 2017-02-26 | 2017-02-27 | -100% |
| 80 |  | Resource Assignment Correction in VM's | 1d | 2017-03-01 | 2017-03-01 | -100% |
| 81 | 1.3 | **SPL-B M.8/D.5** | 61d | 2017-03-31 | 2017-05-30 |  |
| 82 |  | B Samples - M.7/P.8 from Neusoft | 1d | 2017-03-31 | 2017-03-31 | -100% |
| 83 |  | GVT-g EC6 Release from Intel | 1d | 2017-04-28 | 2017-04-28 | -100% |
| 84 |  | GVT-g Pre-Alpha Release from Intel | 1d | 2017-05-26 | 2017-05-26 | -100% |
| 85 | 1.4 | **SPL-C M.10/D.6** | 98d | 2017-05-17 | 2017-08-22 |  |
| 86 |  | GVT-g Alpha Release from Intel | 1d | 2017-07-07 | 2017-07-07 | -100% |
| 87 |  | C Samples - M9/P.8 from Neusoft | 1d | 2017-05-17 | 2017-05-17 | -100% |
| 88 | 1.5 | **Boot Time Optimizations** | 29d | 2017-02-28 | 2017-03-28 | 47% |
| 89 |  | GVT-g performance optimization and functionality discussions with Intel | 1d | 2017-02-28 | 2017-02-28 | -100% |
| 90 |  | Investigate running GVT-g emulation on a interrupt top half and bottom half. | 7d | 2017-03-07 | 2017-03-13 | 1% |
| 91 |  | Implement performance suggestions Intel grahics team | 2d | 2017-02-28 | 2017-03-01 | -100% |
| 92 |  | Investigate perfmance gains to be had if VM1's VGT instance is created in tandem with VM0's. | 4d | 2017-02-28 | 2017-03-03 | 19% |
| 93 |  | Quantify and investigate any opportunities for optimizing boot time w.r.t NFS based FS. | 1d | 2017-03-28 | 2017-03-28 | -100% |
| 94 |  | In conjunction with early VGT instance creation synchronize VM1 start to maximize VM1 early boot. | 4d | 2017-02-28 | 2017-03-03 | -100% |
| 95 | 1.6 | **Code clean up (umbrella task)** | 16d | 2017-03-13 | 2017-03-28 | 74% |
| 96 |  | Fix redundant header inclusions across the x64 Hypervisor code base | 1d | 2017-03-28 | 2017-03-28 | -100% |
| 97 |  | Error checking across the x64 Hypervisor code base | 1d | 2017-03-28 | 2017-03-28 | -100% |
| 98 |  | Remove dead code | 1d | 2017-03-17 | 2017-03-17 | -100% |
| 99 |  | Remove redundant APIs | 1d | 2017-03-28 | 2017-03-28 | -100% |
| 100 |  | Conform to Nucleus coding standard across code base | 1d | 2017-03-17 | 2017-03-17 | -100% |
| 101 |  | Fix issues with abstractions and code organization | 1d | 2017-03-28 | 2017-03-28 | -100% |
| 102 |  | Implement consistent debug logging | 1d | 2017-03-28 | 2017-03-28 | -100% |
| 103 |  | Code Standardization | 2d | 2017-03-13 | 2017-03-14 | 100% |
| 104 |  | TODO: Move ACPI_Init to hv_vm_acpi | 1d | 2017-03-28 | 2017-03-28 | -100% |
| 105 | 1.7 | **Backlog** | 78d | 2017-01-11 | 2017-03-29 | 61% |
| 106 |  | wifi driver fails to load in the IVI after a vmshutdown and vmboot sequence | 2d | 2017-03-28 | 2017-03-29 |  |
| 107 |  | Hang on cluster kernel with intel kernel config option | 1d | 2017-03-24 | 2017-03-24 | -100% |
| 108 | 1.7.3 | **Enablement of 3rd display Pipeline** | 18d | 2017-02-13 | 2017-03-02 | 10% |
| 109 |  | 1.0.1 Kernel with 3rd display enabled (ABU) | 1d | 2017-02-24 | 2017-02-24 | -100% |
| 110 |  | Determine work involved in enabling third display pipeline on MEHV on NS HS7 HW | 1d | 2017-02-13 | 2017-02-13 | -100% |
| 111 |  | Enable 3rd display on xen | 1d | 2017-02-23 | 2017-02-23 | 100% |
| 112 |  | Third Display Enablement | 7d | 2017-02-24 | 2017-03-02 |  |
| 113 |  | I2C Bus 3 (LPSS_I2C_3) is assigned to cluster (vm0) | -28d | 2017-03-28 | 2017-03-28 | -100% |
| 114 |  | Kernel warning on VM1 in intel_display.c on winston init | 1d | 2017-03-27 | 2017-03-27 | -100% |
| 115 | 1.7.6 | **Validate Intel Graphics** | 77d | 2017-01-11 | 2017-03-28 | 100% |
| 116 |  | Define and conduct endurance tests that validate reliability of gVTG graphics | 9d | 2017-01-19 | 2017-01-27 | 100% |
| 117 |  | Validate Intel Graphics test suite and other userspace graphics components needed for Neusoft HS7 requirement specification works on MEHV/gVTG | 17d | 2017-01-11 | 2017-01-27 | 100% |
| 118 |  | Try xsWayland rootfs sent by ABU | 4d | 2017-01-20 | 2017-01-23 | 100% |
| 119 |  | Investigate failing gem_exec_flush test | 13d | 2017-01-27 | 2017-02-08 | 100% |
| 120 |  | Investigate failing gem_exec_parallel test | 7d | 2017-02-02 | 2017-02-08 | 100% |
| 121 |  | Intel-GPU-tools Unit-tests on XEN and MEHV | 22d | 2017-01-30 | 2017-02-20 | 100% |
| 122 |  | Investigating failed unit-test: kms_busy | 1d | 2017-01-31 | 2017-01-31 | 100% |
| 123 |  | Investigating failed unit-test: kms_properties | 1d | 2017-02-02 | 2017-02-02 | 100% |
| 124 |  | Investigating failed unit-test: testdisplay | 1d | 2017-02-03 | 2017-02-03 | 100% |
| 125 |  | Investigate failing unit tests under VM1 of MEHV | 1d | 2017-03-28 | 2017-03-28 | -100% |
| 126 |  | Investigate GPU performance regression with MEVH | 1d | 2017-03-28 | 2017-03-28 | -100% |
| 127 |  | GPIO virtualization | 1d | 2017-03-28 | 2017-03-28 | -100% |
| 128 |  | Audio virtualization | 2d | 2017-02-27 | 2017-02-28 | -100% |
| 129 | 1.7.9 | **Stability/Improvements** | 41d | 2017-02-16 | 2017-03-28 | 100% |
| 130 |  | HVM loader clean-up | 1d | 2017-03-28 | 2017-03-28 | -100% |
| 131 |  | Verify GPU recovery | -74d | 2017-03-28 | 2017-03-28 | -100% |
| 132 |  | Gvt-g operation during VM1 reboots | -34d | 2017-02-16 | 2017-02-16 | -100% |
| 133 |  | Enablement of 4 Displays (MIPI-DSI) bridge | 1d | 2017-03-28 | 2017-03-28 | -100% |
| 134 |  | 3x 1080p video decoding support | 1d | 2017-03-28 | 2017-03-28 | -100% |
| 135 | 1.7.12 | **Enabling Video on MEHV on NS HS7 HW** | 14d | 2017-03-01 | 2017-03-14 | 30% |
| 136 |  | Determine work involved in enabling Video on MEHV on NS HS7 HW | 1d | 2017-03-14 | 2017-03-14 | -100% |
| 137 |  | Running Video on Winston | 9d | 2017-03-01 | 2017-03-09 | -100% |
| 138 |  | Develop intra-guest communication/signalling mechanism and infrastructure. | 4d | 2017-02-10 | 2017-02-13 | 100% |
| 139 |  | Remove dependency on MPS code. | 1d | 2017-03-20 | 2017-03-20 | 100% |
| 140 |  | Validate ACPI enablement to confirm the resource partitioning requirements for Neusoft HS7 system are met | -31d | 2017-03-28 | 2017-03-28 | -100% |

| ID | Task | Duration | Start | Finish | Complete |
| --- | --- | --- | --- | --- | --- |
| 141 | Remove the delay between VM boots | 1d | 2017-03-28 | 2017-03-28 | -100% |
| 142 | MEHV should be backwards compatible with older releases/drops to Neusoft. | 6d | 2017-01-25 | 2017-01-30 | 25% |
| 143 | Black Duck analysis | 1d | 2017-03-28 | 2017-03-28 | -100% |

## Version 2 (saved 2017-03-30)

Note of the change: newNode

Last finish stays 2017-08-22. Complete tasks 49 → 50.

Added:

| ID | Task | Duration | Start | Finish | Resources |
| --- | --- | --- | --- | --- | --- |
| 58 | Rename MEHV_POChar to mehv_ops | 1d | 2017-03-30 | 2017-03-30 | javedm |

Changed:

| ID | Task | Start | Finish | Duration | Complete | Other |
| --- | --- | --- | --- | --- | --- | --- |
| 1 | **Project** |  |  |  | 83% → 84% |  |
| 34 | **SPL-A2 M.6/D.4** |  | 2017-03-29 → 2017-03-30 (+1d) | 44d → 45d | 94% → 97% |  |
| 57 | **Misc** |  | 2017-03-29 → 2017-03-30 (+1d) | 36d → 37d | 56% → 100% |  |
| 62 | Hypervisor documentation updates |  |  |  | 0% → 100% |  |
| 63 | **Bugs** |  | 2017-03-28 → 2017-03-30 (+2d) | 43d → 45d |  |  |
| 64 | Crash with MEHV 2.0 after following command "echo l > /proc/sysrq-trigger" | 2017-03-28 → 2017-03-30 (+2d) | 2017-03-28 → 2017-03-30 (+2d) |  |  |  |
| 89 | **Boot Time Optimizations** |  | 2017-03-28 → 2017-03-30 (+2d) | 29d → 31d |  |  |
| 94 | Quantify and investigate any opportunities for optimizing boot time w.r.t NFS based FS. | 2017-03-28 → 2017-03-30 (+2d) | 2017-03-28 → 2017-03-30 (+2d) |  |  |  |
| 96 | **Code clean up (umbrella task)** |  | 2017-03-28 → 2017-03-30 (+2d) | 16d → 18d | 74% → 76% |  |
| 97 | Fix redundant header inclusions across the x64 Hypervisor code base | 2017-03-28 → 2017-03-30 (+2d) | 2017-03-28 → 2017-03-30 (+2d) |  |  |  |
| 98 | Error checking across the x64 Hypervisor code base | 2017-03-28 → 2017-03-30 (+2d) | 2017-03-28 → 2017-03-30 (+2d) |  |  | resources javedm → aarehman |
| 100 | Remove redundant APIs | 2017-03-28 → 2017-03-30 (+2d) | 2017-03-28 → 2017-03-30 (+2d) |  |  |  |
| 101 | Conform to Nucleus coding standard across code base |  | 2017-03-17 → 2017-03-20 (+3d) | 1d → 4d |  |  |
| 102 | Fix issues with abstractions and code organization | 2017-03-28 → 2017-03-30 (+2d) | 2017-03-28 → 2017-03-30 (+2d) |  |  |  |
| 103 | Implement consistent debug logging | 2017-03-28 → 2017-03-30 (+2d) | 2017-03-28 → 2017-03-30 (+2d) |  |  |  |
| 105 | TODO: Move ACPI_Init to hv_vm_acpi | 2017-03-28 → 2017-03-30 (+2d) | 2017-03-28 → 2017-03-30 (+2d) |  |  |  |
| 106 | **Backlog** |  | 2017-03-29 → 2017-03-31 (+2d) | 78d → 80d |  |  |
| 107 | wifi driver fails to load in the IVI after a vmshutdown and vmboot sequence | 2017-03-28 → 2017-03-30 (+2d) | 2017-03-29 → 2017-03-31 (+2d) |  |  |  |
| 114 | I2C Bus 3 (LPSS_I2C_3) is assigned to cluster (vm0) | 2017-03-28 → 2017-03-30 (+2d) | 2017-03-28 → 2017-03-30 (+2d) | -28d → -30d |  |  |
| 116 | **Validate Intel Graphics** |  | 2017-03-28 → 2017-03-30 (+2d) | 77d → 79d |  |  |
| 126 | Investigate failing unit tests under VM1 of MEHV | 2017-03-28 → 2017-03-30 (+2d) | 2017-03-28 → 2017-03-30 (+2d) |  |  |  |
| 127 | Investigate GPU performance regression with MEVH | 2017-03-28 → 2017-03-30 (+2d) | 2017-03-28 → 2017-03-30 (+2d) |  |  |  |
| 128 | GPIO virtualization | 2017-03-28 → 2017-03-30 (+2d) | 2017-03-28 → 2017-03-30 (+2d) |  |  |  |
| 130 | **Stability/Improvements** |  | 2017-03-28 → 2017-03-30 (+2d) | 41d → 43d |  |  |
| 131 | HVM loader clean-up | 2017-03-28 → 2017-03-30 (+2d) | 2017-03-28 → 2017-03-30 (+2d) |  |  |  |
| 132 | Verify GPU recovery | 2017-03-28 → 2017-03-30 (+2d) | 2017-03-28 → 2017-03-30 (+2d) | -74d → -76d |  |  |
| 134 | Enablement of 4 Displays (MIPI-DSI) bridge | 2017-03-28 → 2017-03-30 (+2d) | 2017-03-28 → 2017-03-30 (+2d) |  |  |  |
| 135 | 3x 1080p video decoding support | 2017-03-28 → 2017-03-30 (+2d) | 2017-03-28 → 2017-03-30 (+2d) |  |  |  |
| 141 | Validate ACPI enablement to confirm the resource partitioning requirements for Neusoft HS7 system are met | 2017-03-28 → 2017-03-30 (+2d) | 2017-03-28 → 2017-03-30 (+2d) | -31d → -33d |  |  |
| 142 | Remove the delay between VM boots | 2017-03-28 → 2017-03-30 (+2d) | 2017-03-28 → 2017-03-30 (+2d) |  |  |  |
| 144 | Black Duck analysis | 2017-03-28 → 2017-03-30 (+2d) | 2017-03-28 → 2017-03-30 (+2d) |  |  |  |

## Version 3 (saved 2017-03-31)

Note of the change: new

Last finish stays 2017-08-22. Complete tasks 50 → 49.

Added:

| ID | Task | Duration | Start | Finish | Resources |
| --- | --- | --- | --- | --- | --- |
| 57 | MEHV 2.2 - ACPI table for two MIPI-DSI displays on IVI VM | 1d | 2017-03-31 | 2017-03-31 | javedm |

Changed:

| ID | Task | Start | Finish | Duration | Complete |
| --- | --- | --- | --- | --- | --- |
| 1 | **Project** |  |  |  | 84% → 85% |
| 34 | **SPL-A2 M.6/D.4** |  | 2017-03-30 → 2017-03-31 (+1d) | 45d → 46d |  |
| 48 | ABL 1651 from ABU | 2017-02-20 → 2017-03-10 (+18d) | 2017-02-20 → 2017-03-10 (+18d) |  |  |
| 51 | **Development Drops** |  | 2017-03-28 → 2017-03-31 (+3d) | 27d → 30d |  |
| 58 | **Misc** |  | 2017-03-30 → 2017-03-31 (+1d) | 37d → 38d |  |
| 59 | Rename MEHV_POChar to mehv_ops | 2017-03-30 → 2017-03-31 (+1d) | 2017-03-30 → 2017-03-31 (+1d) |  |  |
| 63 | Hypervisor documentation updates |  |  |  | 100% → 119% |
| 64 | **Bugs** |  | 2017-03-30 → 2017-03-31 (+1d) | 45d → 46d |  |
| 65 | Crash with MEHV 2.0 after following command "echo l > /proc/sysrq-trigger" | 2017-03-30 → 2017-03-31 (+1d) | 2017-03-30 → 2017-03-31 (+1d) |  |  |
| 78 | hypervisor kernel header file Non-GPL again | 2017-02-27 → 2017-03-03 (+4d) | 2017-02-27 → 2017-03-03 (+4d) |  |  |
| 81 | MMC1 timeout message on Linux console with Intel beta release | 2017-02-26 → 2017-03-21 (+23d) | 2017-02-27 → 2017-03-21 (+22d) | 2d → 1d |  |
| 89 | C Samples - M9/P.8 from Neusoft | 2017-05-17 → 2017-07-08 (+52d) | 2017-05-17 → 2017-07-08 (+52d) |  |  |
| 90 | **Boot Time Optimizations** |  | 2017-03-30 → 2017-03-31 (+1d) | 31d → 32d |  |
| 95 | Quantify and investigate any opportunities for optimizing boot time w.r.t NFS based FS. | 2017-03-30 → 2017-03-31 (+1d) | 2017-03-30 → 2017-03-31 (+1d) |  |  |
| 97 | **Code clean up (umbrella task)** |  | 2017-03-30 → 2017-03-31 (+1d) | 18d → 19d | 76% → 85% |
| 98 | Fix redundant header inclusions across the x64 Hypervisor code base | 2017-03-30 → 2017-03-31 (+1d) | 2017-03-30 → 2017-03-31 (+1d) |  |  |
| 99 | Error checking across the x64 Hypervisor code base | 2017-03-30 → 2017-04-01 (+2d) | 2017-03-30 → 2017-04-01 (+2d) |  |  |
| 101 | Remove redundant APIs | 2017-03-30 → 2017-04-02 (+3d) | 2017-03-30 → 2017-04-02 (+3d) |  |  |
| 103 | Fix issues with abstractions and code organization | 2017-03-30 → 2017-04-03 (+4d) | 2017-03-30 → 2017-04-03 (+4d) |  |  |
| 104 | Implement consistent debug logging | 2017-03-30 → 2017-04-04 (+5d) | 2017-03-30 → 2017-04-04 (+5d) |  |  |
| 106 | TODO: Move ACPI_Init to hv_vm_acpi | 2017-03-30 → 2017-04-05 (+6d) | 2017-03-30 → 2017-04-05 (+6d) |  |  |
| 107 | **Backlog** |  | 2017-03-31 → 2017-04-03 (+3d) | 80d → 83d |  |
| 108 | wifi driver fails to load in the IVI after a vmshutdown and vmboot sequence | 2017-03-30 → 2017-03-31 (+1d) | 2017-03-31 → 2017-04-03 (+3d) | 2d → 4d |  |
| 114 | Third Display Enablement | 2017-02-24 → 2017-02-25 (+1d) | 2017-03-02 → 2017-03-03 (+1d) |  |  |
| 115 | I2C Bus 3 (LPSS_I2C_3) is assigned to cluster (vm0) | 2017-03-30 → 2017-03-31 (+1d) | 2017-03-30 → 2017-03-31 (+1d) | -30d → -31d |  |
| 117 | **Validate Intel Graphics** |  | 2017-03-30 → 2017-03-31 (+1d) | 79d → 80d |  |
| 127 | Investigate failing unit tests under VM1 of MEHV | 2017-03-30 → 2017-03-31 (+1d) | 2017-03-30 → 2017-03-31 (+1d) |  |  |
| 128 | Investigate GPU performance regression with MEVH | 2017-03-30 → 2017-04-01 (+2d) | 2017-03-30 → 2017-04-01 (+2d) |  |  |
| 129 | GPIO virtualization | 2017-03-30 → 2017-03-31 (+1d) | 2017-03-30 → 2017-03-31 (+1d) |  |  |
| 131 | **Stability/Improvements** |  | 2017-03-30 → 2017-03-31 (+1d) | 43d → 44d |  |
| 132 | HVM loader clean-up | 2017-03-30 → 2017-03-31 (+1d) | 2017-03-30 → 2017-03-31 (+1d) |  |  |
| 133 | Verify GPU recovery | 2017-03-30 → 2017-04-01 (+2d) | 2017-03-30 → 2017-04-01 (+2d) | -76d → 1d |  |
| 135 | Enablement of 4 Displays (MIPI-DSI) bridge | 2017-03-30 → 2017-03-31 (+1d) | 2017-03-30 → 2017-03-31 (+1d) |  |  |
| 136 | 3x 1080p video decoding support | 2017-03-30 → 2017-04-01 (+2d) | 2017-03-30 → 2017-04-01 (+2d) |  |  |
| 142 | Validate ACPI enablement to confirm the resource partitioning requirements for Neusoft HS7 system are met | 2017-03-30 → 2017-03-31 (+1d) | 2017-03-30 → 2017-03-31 (+1d) | -33d → -34d |  |
| 143 | Remove the delay between VM boots | 2017-03-30 → 2017-03-31 (+1d) | 2017-03-30 → 2017-03-31 (+1d) |  |  |
| 145 | Black Duck analysis | 2017-03-30 → 2017-04-01 (+2d) | 2017-03-30 → 2017-04-01 (+2d) |  |  |

## Version 4 (saved 2017-04-08)

Note of the change: dashboard

Last finish stays 2017-08-22. Complete tasks 49 → 53.

Added:

| ID | Task | Duration | Start | Finish | Resources |
| --- | --- | --- | --- | --- | --- |
| 80 | **SPL-A3** | 10d | 2017-04-03 | 2017-04-12 |  |
| 82 | Cluster VM reboot not successful with Graphics Virtualization | 10d | 2017-04-03 | 2017-04-12 | cgriffin |
| 85 | **PCR3** | 19d | 2017-04-07 | 2017-04-25 |  |
| 86 | USBMUX Device Assignment | 1d | 2017-04-07 | 2017-04-07 |  |
| 87 | SPI - Device Assignment | 5d | 2017-04-08 | 2017-04-12 |  |
| 88 | PWM - Device Assignment | 19d | 2017-04-13 | 2017-05-01 |  |

Changed:

| ID | Task | Start | Finish | Duration | Complete | Other |
| --- | --- | --- | --- | --- | --- | --- |
| 1 | **Project** |  |  |  | 85% → 81% |  |
| 34 | **SPL-A2 M.6/D.4** |  | 2017-03-31 → 2017-04-03 (+3d) | 46d → 49d | 97% → 100% |  |
| 51 | **Development Drops** |  | 2017-03-31 → 2017-03-28 (-3d) | 30d → 27d |  |  |
| 61 | Hypervisor documentation updates |  | 2017-03-29 → 2017-03-31 (+2d) | 2d → 4d | 119% → 100% |  |
| 62 | **Bugs** |  | 2017-03-31 → 2017-04-03 (+3d) | 46d → 49d | 94% → 100% |  |
| 68 | **Reboot Issues** |  | 2017-03-27 → 2017-04-03 (+7d) | 42d → 49d | 89% → 100% |  |
| 70 | Reboot of Cluster VM does not reboot IVI VM |  | 2017-03-24 → 2017-04-03 (+10d) | 10d → 20d | 75% → 100% |  |
| 71 | Verify vm reboot use cases |  | 2017-03-27 → 2017-03-28 (+1d) | 1d → 2d |  |  |
| 81 | MEHV 2.2 - ACPI table for two MIPI-DSI displays on IVI VM | 2017-03-31 → 2017-04-04 (+4d) | 2017-03-31 → 2017-04-05 (+5d) | 1d → 2d |  |  |
| 83 | Crash with MEHV 2.0 after following command "echo l > /proc/sysrq-trigger" | 2017-03-31 → 2017-04-05 (+5d) | 2017-03-31 → 2017-04-06 (+6d) | 1d → 2d |  | resources javedm → aarehman |
| 84 | Rename MEHV_POChar to mehv_ops | 2017-03-31 → 2017-04-06 (+6d) | 2017-03-31 → 2017-04-06 (+6d) |  |  |  |
| 96 | **Boot Time Optimizations** |  | 2017-03-31 → 2017-04-07 (+7d) | 32d → 39d | 47% → 100% |  |
| 97 | GVT-g performance optimization and functionality discussions with Intel |  | 2017-02-28 → 2017-03-17 (+17d) | 1d → 18d |  |  |
| 98 | Investigate running GVT-g emulation on a interrupt top half and bottom half. |  | 2017-03-13 → 2017-03-07 (-6d) | 7d → 1d | 1% → 100% |  |
| 99 | Implement performance suggestions Intel grahics team |  | 2017-03-01 → 2017-03-02 (+1d) | 2d → 3d |  |  |
| 100 | Investigate perfmance gains to be had if VM1's VGT instance is created in tandem with VM0's. |  | 2017-03-03 → 2017-03-20 (+17d) | 4d → 21d | 19% → 100% |  |
| 101 | Quantify and investigate any opportunities for optimizing boot time w.r.t NFS based FS. | 2017-03-31 → 2017-04-07 (+7d) | 2017-03-31 → 2017-04-07 (+7d) |  |  |  |
| 102 | In conjunction with early VGT instance creation synchronize VM1 start to maximize VM1 early boot. |  | 2017-03-03 → 2017-03-23 (+20d) | 4d → 24d |  |  |
| 103 | **Code clean up (umbrella task)** |  | 2017-03-31 → 2017-04-07 (+7d) | 19d → 26d |  |  |
| 104 | Fix redundant header inclusions across the x64 Hypervisor code base | 2017-03-31 → 2017-04-07 (+7d) | 2017-03-31 → 2017-04-07 (+7d) |  |  |  |
| 105 | Error checking across the x64 Hypervisor code base | 2017-04-01 → 2017-04-03 (+2d) | 2017-04-01 → 2017-04-03 (+2d) |  |  |  |
| 107 | Remove redundant APIs | 2017-04-02 → 2017-04-04 (+2d) | 2017-04-02 → 2017-04-05 (+3d) | 1d → 2d | -100% → 38% |  |
| 108 | Conform to Nucleus coding standard across code base |  | 2017-03-20 → 2017-03-21 (+1d) | 4d → 5d |  |  |
| 109 | Fix issues with abstractions and code organization | 2017-04-03 → 2017-04-08 (+5d) | 2017-04-03 → 2017-04-08 (+5d) |  |  |  |
| 110 | Implement consistent debug logging | 2017-04-04 → 2017-04-09 (+5d) | 2017-04-04 → 2017-04-09 (+5d) |  |  |  |
| 112 | TODO: Move ACPI_Init to hv_vm_acpi | 2017-04-05 → 2017-04-10 (+5d) | 2017-04-05 → 2017-04-10 (+5d) |  |  |  |
| 113 | **Backlog** |  | 2017-04-03 → 2017-04-10 (+7d) | 83d → 90d |  |  |
| 114 | wifi driver fails to load in the IVI after a vmshutdown and vmboot sequence | 2017-03-31 → 2017-04-07 (+7d) | 2017-04-03 → 2017-04-10 (+7d) |  |  |  |
| 121 | I2C Bus 3 (LPSS_I2C_3) is assigned to cluster (vm0) | 2017-03-31 → 2017-04-07 (+7d) | 2017-03-31 → 2017-04-07 (+7d) | -31d → -38d |  |  |
| 123 | **Validate Intel Graphics** |  | 2017-03-31 → 2017-04-07 (+7d) | 80d → 87d |  |  |
| 133 | Investigate failing unit tests under VM1 of MEHV | 2017-03-31 → 2017-04-07 (+7d) | 2017-03-31 → 2017-04-07 (+7d) |  |  |  |
| 134 | Investigate GPU performance regression with MEVH | 2017-04-01 → 2017-04-08 (+7d) | 2017-04-01 → 2017-04-08 (+7d) |  |  |  |
| 135 | GPIO virtualization | 2017-03-31 → 2017-04-07 (+7d) | 2017-03-31 → 2017-04-07 (+7d) |  |  |  |
| 137 | **Stability/Improvements** |  | 2017-03-31 → 2017-04-07 (+7d) | 44d → 51d |  |  |
| 138 | HVM loader clean-up | 2017-03-31 → 2017-04-07 (+7d) | 2017-03-31 → 2017-04-07 (+7d) |  |  |  |
| 139 | Verify GPU recovery | 2017-04-01 → 2017-04-08 (+7d) | 2017-04-01 → 2017-04-08 (+7d) |  |  |  |
| 141 | Enablement of 4 Displays (MIPI-DSI) bridge | 2017-03-31 → 2017-04-07 (+7d) | 2017-03-31 → 2017-04-07 (+7d) |  |  |  |
| 142 | 3x 1080p video decoding support | 2017-04-01 → 2017-04-08 (+7d) | 2017-04-01 → 2017-04-08 (+7d) |  |  |  |
| 148 | Validate ACPI enablement to confirm the resource partitioning requirements for Neusoft HS7 system are met | 2017-03-31 → 2017-04-07 (+7d) | 2017-03-31 → 2017-04-07 (+7d) | -34d → -41d |  |  |
| 149 | Remove the delay between VM boots | 2017-03-31 → 2017-04-07 (+7d) | 2017-03-31 → 2017-04-07 (+7d) |  |  |  |
| 151 | Black Duck analysis | 2017-04-01 → 2017-04-08 (+7d) | 2017-04-01 → 2017-04-08 (+7d) |  |  |  |

## Version 5 (saved 2017-04-09)

Note of the change: n

Last finish stays 2017-08-22.

Changed:

| ID | Task | Start | Finish | Duration |
| --- | --- | --- | --- | --- |
| 85 | **PCR3** | 2017-04-07 → 2017-04-08 (+1d) | 2017-04-25 → 2017-04-26 (+1d) |  |
| 86 | USBMUX Device Assignment | 2017-04-07 → 2017-04-08 (+1d) | 2017-04-07 → 2017-04-10 (+3d) | 1d → 3d |
| 87 | SPI - Device Assignment | 2017-04-08 → 2017-04-11 (+3d) | 2017-04-12 → 2017-04-13 (+1d) | 5d → 3d |
| 88 | PWM - Device Assignment | 2017-04-13 → 2017-04-14 (+1d) | 2017-05-01 → 2017-05-02 (+1d) |  |
| 96 | **Boot Time Optimizations** |  | 2017-04-07 → 2017-04-08 (+1d) | 39d → 40d |
| 101 | Quantify and investigate any opportunities for optimizing boot time w.r.t NFS based FS. | 2017-04-07 → 2017-04-08 (+1d) | 2017-04-07 → 2017-04-08 (+1d) |  |
| 103 | **Code clean up (umbrella task)** |  | 2017-04-07 → 2017-04-08 (+1d) | 26d → 27d |
| 104 | Fix redundant header inclusions across the x64 Hypervisor code base | 2017-04-07 → 2017-04-08 (+1d) | 2017-04-07 → 2017-04-08 (+1d) |  |
| 109 | Fix issues with abstractions and code organization | 2017-04-08 → 2017-04-09 (+1d) | 2017-04-08 → 2017-04-09 (+1d) |  |
| 110 | Implement consistent debug logging | 2017-04-09 → 2017-04-10 (+1d) | 2017-04-09 → 2017-04-10 (+1d) |  |
| 112 | TODO: Move ACPI_Init to hv_vm_acpi | 2017-04-10 → 2017-04-11 (+1d) | 2017-04-10 → 2017-04-11 (+1d) |  |
| 113 | **Backlog** |  | 2017-04-10 → 2017-04-11 (+1d) | 90d → 91d |
| 114 | wifi driver fails to load in the IVI after a vmshutdown and vmboot sequence | 2017-04-07 → 2017-04-08 (+1d) | 2017-04-10 → 2017-04-11 (+1d) |  |
| 121 | I2C Bus 3 (LPSS_I2C_3) is assigned to cluster (vm0) | 2017-04-07 → 2017-04-08 (+1d) | 2017-04-07 → 2017-04-08 (+1d) | -38d → -39d |
| 123 | **Validate Intel Graphics** |  | 2017-04-07 → 2017-04-08 (+1d) | 87d → 88d |
| 133 | Investigate failing unit tests under VM1 of MEHV | 2017-04-07 → 2017-04-08 (+1d) | 2017-04-07 → 2017-04-08 (+1d) |  |
| 134 | Investigate GPU performance regression with MEVH | 2017-04-08 → 2017-04-09 (+1d) | 2017-04-08 → 2017-04-09 (+1d) |  |
| 135 | GPIO virtualization | 2017-04-07 → 2017-04-08 (+1d) | 2017-04-07 → 2017-04-08 (+1d) |  |
| 137 | **Stability/Improvements** |  | 2017-04-07 → 2017-04-08 (+1d) | 51d → 52d |
| 138 | HVM loader clean-up | 2017-04-07 → 2017-04-08 (+1d) | 2017-04-07 → 2017-04-08 (+1d) |  |
| 139 | Verify GPU recovery | 2017-04-08 → 2017-04-09 (+1d) | 2017-04-08 → 2017-04-09 (+1d) |  |
| 141 | Enablement of 4 Displays (MIPI-DSI) bridge | 2017-04-07 → 2017-04-08 (+1d) | 2017-04-07 → 2017-04-08 (+1d) |  |
| 142 | 3x 1080p video decoding support | 2017-04-08 → 2017-04-09 (+1d) | 2017-04-08 → 2017-04-09 (+1d) |  |
| 148 | Validate ACPI enablement to confirm the resource partitioning requirements for Neusoft HS7 system are met | 2017-04-07 → 2017-04-08 (+1d) | 2017-04-07 → 2017-04-08 (+1d) | -41d → -42d |
| 149 | Remove the delay between VM boots | 2017-04-07 → 2017-04-08 (+1d) | 2017-04-07 → 2017-04-08 (+1d) |  |
| 151 | Black Duck analysis | 2017-04-08 → 2017-04-09 (+1d) | 2017-04-08 → 2017-04-09 (+1d) |  |

## Version 6 (saved 2017-04-10)

Note of the change: d

Last finish 2017-08-22 → 2017-07-08 (-45d).

Changed:

| ID | Task | Start | Finish | Duration |
| --- | --- | --- | --- | --- |
| 1 | **Project** |  | 2017-08-22 → 2017-07-08 (-45d) | 224d → 179d |
| 85 | **PCR3** | 2017-04-08 → 2017-04-10 (+2d) | 2017-04-26 → 2017-05-03 (+7d) | 19d → 24d |
| 86 | USBMUX Device Assignment | 2017-04-08 → 2017-04-10 (+2d) |  | 3d → 1d |
| 88 | PWM - Device Assignment |  | 2017-05-02 → 2017-05-03 (+1d) | 19d → 20d |
| 89 | **SPL-B M.8/D.5** |  | 2017-05-30 → 2017-05-26 (-4d) | 61d → 57d |
| 93 | **SPL-C M.10/D.6** | 2017-05-17 → 2017-07-07 (+51d) | 2017-08-22 → 2017-07-08 (-45d) | 98d → 2d |
| 96 | **Boot Time Optimizations** |  | 2017-04-08 → 2017-04-10 (+2d) | 40d → 42d |
| 101 | Quantify and investigate any opportunities for optimizing boot time w.r.t NFS based FS. | 2017-04-08 → 2017-04-10 (+2d) | 2017-04-08 → 2017-04-10 (+2d) |  |
| 103 | **Code clean up (umbrella task)** |  | 2017-04-08 → 2017-04-13 (+5d) | 27d → 32d |
| 104 | Fix redundant header inclusions across the x64 Hypervisor code base | 2017-04-08 → 2017-04-10 (+2d) | 2017-04-08 → 2017-04-10 (+2d) |  |
| 109 | Fix issues with abstractions and code organization | 2017-04-09 → 2017-04-11 (+2d) | 2017-04-09 → 2017-04-11 (+2d) |  |
| 110 | Implement consistent debug logging | 2017-04-10 → 2017-04-12 (+2d) | 2017-04-10 → 2017-04-12 (+2d) |  |
| 112 | TODO: Move ACPI_Init to hv_vm_acpi | 2017-04-11 → 2017-04-13 (+2d) | 2017-04-11 → 2017-04-13 (+2d) |  |
| 113 | **Backlog** |  | 2017-04-11 → 2017-04-18 (+7d) | 91d → 98d |
| 114 | wifi driver fails to load in the IVI after a vmshutdown and vmboot sequence | 2017-04-08 → 2017-04-10 (+2d) |  | 4d → 2d |
| 116 | I2C Bus 3 (LPSS_I2C_3) is assigned to cluster (vm0) | 2017-04-08 → 2017-04-12 (+4d) | 2017-04-08 → 2017-04-12 (+4d) | -39d → 1d |
| 118 | GPIO virtualization | 2017-04-08 → 2017-04-13 (+5d) | 2017-04-08 → 2017-04-13 (+5d) |  |
| 120 | Enablement of 4 Displays (MIPI-DSI) bridge | 2017-04-08 → 2017-04-14 (+6d) | 2017-04-08 → 2017-04-14 (+6d) |  |
| 121 | 3x 1080p video decoding support | 2017-04-09 → 2017-04-15 (+6d) | 2017-04-09 → 2017-04-15 (+6d) |  |
| 124 | Validate ACPI enablement to confirm the resource partitioning requirements for Neusoft HS7 system are met | 2017-04-08 → 2017-04-16 (+8d) | 2017-04-08 → 2017-04-16 (+8d) | -42d → 1d |
| 125 | Remove the delay between VM boots | 2017-04-08 → 2017-04-17 (+9d) | 2017-04-08 → 2017-04-17 (+9d) |  |
| 127 | Black Duck analysis | 2017-04-09 → 2017-04-18 (+9d) | 2017-04-09 → 2017-04-18 (+9d) |  |
| 131 | **Stability/Improvements** |  | 2017-04-08 → 2017-04-11 (+3d) | 52d → 55d |
| 132 | HVM loader clean-up | 2017-04-08 → 2017-04-10 (+2d) | 2017-04-08 → 2017-04-10 (+2d) |  |
| 133 | Verify GPU recovery | 2017-04-09 → 2017-04-11 (+2d) | 2017-04-09 → 2017-04-11 (+2d) |  |
| 135 | **Validate Intel Graphics** |  | 2017-04-08 → 2017-04-11 (+3d) | 88d → 91d |
| 145 | Investigate failing unit tests under VM1 of MEHV | 2017-04-08 → 2017-04-10 (+2d) | 2017-04-08 → 2017-04-10 (+2d) |  |
| 146 | Investigate GPU performance regression with MEVH | 2017-04-09 → 2017-04-11 (+2d) | 2017-04-09 → 2017-04-11 (+2d) |  |
| 147 | **Enablement of 3rd display Pipeline** |  | 2017-03-02 → 2017-03-03 (+1d) | 18d → 19d |

## Version 7 (saved 2017-04-12)

Note of the change: F

Last finish stays 2017-07-08.

Added:

| ID | Task | Duration | Start | Finish | Resources |
| --- | --- | --- | --- | --- | --- |
| 113 | TODO: Unhandled MMIO Access | 1d | 2017-04-10 | 2017-04-10 | javedm |

Changed:

| ID | Task | Start | Finish | Duration | Complete |
| --- | --- | --- | --- | --- | --- |
| 80 | **SPL-A3** |  |  |  | 67% → 73% |
| 83 | Crash with MEHV 2.0 after following command "echo l > /proc/sysrq-trigger" |  | 2017-04-06 → 2017-04-11 (+5d) | 2d → 7d |  |
| 85 | **PCR3** | 2017-04-10 → 2017-04-12 (+2d) | 2017-05-03 → 2017-05-05 (+2d) |  |  |
| 86 | USBMUX Device Assignment | 2017-04-10 → 2017-04-12 (+2d) | 2017-04-10 → 2017-04-12 (+2d) |  |  |
| 87 | SPI - Device Assignment | 2017-04-11 → 2017-04-13 (+2d) | 2017-04-13 → 2017-04-17 (+4d) | 3d → 5d |  |
| 88 | PWM - Device Assignment | 2017-04-14 → 2017-04-18 (+4d) | 2017-05-03 → 2017-05-05 (+2d) | 20d → 18d |  |
| 96 | **Boot Time Optimizations** |  | 2017-04-10 → 2017-04-12 (+2d) | 42d → 44d |  |
| 101 | Quantify and investigate any opportunities for optimizing boot time w.r.t NFS based FS. | 2017-04-10 → 2017-04-12 (+2d) | 2017-04-10 → 2017-04-12 (+2d) |  |  |
| 103 | **Code clean up (umbrella task)** |  | 2017-04-13 → 2017-04-15 (+2d) | 32d → 34d |  |
| 104 | Fix redundant header inclusions across the x64 Hypervisor code base | 2017-04-10 → 2017-04-12 (+2d) | 2017-04-10 → 2017-04-12 (+2d) |  |  |
| 109 | Fix issues with abstractions and code organization | 2017-04-11 → 2017-04-13 (+2d) | 2017-04-11 → 2017-04-13 (+2d) |  |  |
| 110 | Implement consistent debug logging | 2017-04-12 → 2017-04-14 (+2d) | 2017-04-12 → 2017-04-14 (+2d) |  |  |
| 112 | TODO: Move ACPI_Init to hv_vm_acpi | 2017-04-13 → 2017-04-15 (+2d) | 2017-04-13 → 2017-04-15 (+2d) |  |  |
| 114 | **Backlog** |  | 2017-04-18 → 2017-04-20 (+2d) | 98d → 100d |  |
| 115 | wifi driver fails to load in the IVI after a vmshutdown and vmboot sequence | 2017-04-10 → 2017-04-12 (+2d) | 2017-04-11 → 2017-04-13 (+2d) |  |  |
| 117 | I2C Bus 3 (LPSS_I2C_3) is assigned to cluster (vm0) | 2017-04-12 → 2017-04-14 (+2d) | 2017-04-12 → 2017-04-14 (+2d) |  |  |
| 119 | GPIO virtualization | 2017-04-13 → 2017-04-15 (+2d) | 2017-04-13 → 2017-04-15 (+2d) |  |  |
| 121 | Enablement of 4 Displays (MIPI-DSI) bridge | 2017-04-14 → 2017-04-16 (+2d) | 2017-04-14 → 2017-04-16 (+2d) |  |  |
| 122 | 3x 1080p video decoding support | 2017-04-15 → 2017-04-17 (+2d) | 2017-04-15 → 2017-04-17 (+2d) |  |  |
| 125 | Validate ACPI enablement to confirm the resource partitioning requirements for Neusoft HS7 system are met | 2017-04-16 → 2017-04-18 (+2d) | 2017-04-16 → 2017-04-18 (+2d) |  |  |
| 126 | Remove the delay between VM boots | 2017-04-17 → 2017-04-19 (+2d) | 2017-04-17 → 2017-04-19 (+2d) |  |  |
| 128 | Black Duck analysis | 2017-04-18 → 2017-04-20 (+2d) | 2017-04-18 → 2017-04-20 (+2d) |  |  |
| 132 | **Stability/Improvements** |  | 2017-04-11 → 2017-04-13 (+2d) | 55d → 57d |  |
| 133 | HVM loader clean-up | 2017-04-10 → 2017-04-12 (+2d) | 2017-04-10 → 2017-04-12 (+2d) |  |  |
| 134 | Verify GPU recovery | 2017-04-11 → 2017-04-13 (+2d) | 2017-04-11 → 2017-04-13 (+2d) |  |  |
| 136 | **Validate Intel Graphics** |  | 2017-04-11 → 2017-04-13 (+2d) | 91d → 93d |  |
| 146 | Investigate failing unit tests under VM1 of MEHV | 2017-04-10 → 2017-04-12 (+2d) | 2017-04-10 → 2017-04-12 (+2d) |  |  |
| 147 | Investigate GPU performance regression with MEVH | 2017-04-11 → 2017-04-13 (+2d) | 2017-04-11 → 2017-04-13 (+2d) |  |  |

## Version 8 (saved 2017-05-09)

Note of the change: sdsd

Last finish 2017-07-08 → 2017-08-11 (+34d).

Added:

| ID | Task | Duration | Start | Finish | Resources |
| --- | --- | --- | --- | --- | --- |
| 85 | Enabling display on neusoft using XEN POC5 | 5d | 2017-04-14 | 2017-04-18 | aarehman |
| 86 | EPT violation and assertion that occurs rarely | 1d | 2017-05-08 | 2017-05-08 | atraza |
| 88 | parsing VBT table to vm1 | 2d | 2017-04-25 | 2017-04-26 | javedm |
| 89 | ACPI new camera related entries | 1d | 2017-05-09 | 2017-05-09 | javedm |

Changed:

| ID | Task | Start | Finish | Duration | Complete | Other |
| --- | --- | --- | --- | --- | --- | --- |
| 1 | **Project** |  | 2017-07-08 → 2017-08-11 (+34d) | 179d → 213d | 81% → 86% |  |
| 19 | **Bugs** |  | 2017-02-15 → 2017-02-16 (+1d) | 29d → 30d |  |  |
| 31 | **Console Logs analysis** |  | 2017-02-09 → 2017-02-16 (+7d) | 3d → 10d |  |  |
| 34 | **SPL-A2 M.6/D.4** |  | 2017-04-03 → 2017-04-07 (+4d) | 49d → 53d |  |  |
| 35 | **Boot Time Optimizations** |  | 2017-03-20 → 2017-03-21 (+1d) | 30d → 31d |  |  |
| 43 | **Enable support for POC 5** | 2017-02-24 → 2017-02-28 (+4d) | 2017-03-08 → 2017-03-20 (+12d) | 13d → 21d |  |  |
| 44 | POC 5 – 02/24 | 2017-02-24 → 2017-02-28 (+4d) |  | 6d → 2d |  |  |
| 46 | **MEHV for GP 1.0.1 and ABL 1651** | 2017-02-20 → 2017-02-21 (+1d) | 2017-03-14 → 2017-03-29 (+15d) | 23d → 37d |  |  |
| 47 | GP 1.0.1 (ABU) | 2017-02-20 → 2017-03-08 (+16d) |  | 18d → 2d |  |  |
| 48 | ABL 1651 from ABU | 2017-03-10 → 2017-02-23 (-15d) | 2017-03-10 → 2017-02-24 (-14d) | 1d → 2d |  |  |
| 57 | **Misc** |  | 2017-03-31 → 2017-04-07 (+7d) | 38d → 45d |  |  |
| 62 | **Bugs** |  | 2017-04-03 → 2017-04-07 (+4d) | 49d → 53d |  |  |
| 75 | hypervisor kernel header file Non-GPL again | 2017-03-03 → 2017-02-26 (-5d) | 2017-03-03 → 2017-02-27 (-4d) | 1d → 2d |  |  |
| 78 | MMC1 timeout message on Linux console with Intel beta release | 2017-03-21 → 2017-02-26 (-23d) | 2017-03-21 → 2017-02-27 (-22d) | 1d → 2d |  |  |
| 80 | **SPL-A3** | 2017-04-03 → 2017-03-24 (-10d) | 2017-04-12 → 2017-05-09 (+27d) | 10d → 47d | 73% → 100% |  |
| 81 | MEHV 2.2 - ACPI table for two MIPI-DSI displays on IVI VM |  | 2017-04-05 → 2017-04-07 (+2d) | 2d → 4d |  |  |
| 82 | Cluster VM reboot not successful with Graphics Virtualization |  | 2017-04-12 → 2017-04-28 (+16d) | 10d → 26d | 50% → 108% |  |
| 87 | Hang on cluster kernel with intel kernel config option |  | 2017-03-24 → 2017-03-27 (+3d) | 1d → 4d |  |  |
| 90 | **PCR3** | 2017-04-12 → 2017-05-08 (+26d) | 2017-05-05 → 2017-05-30 (+25d) | 24d → 23d |  |  |
| 91 | USBMUX Device Assignment | 2017-04-12 → 2017-05-08 (+26d) | 2017-04-12 → 2017-05-08 (+26d) |  |  |  |
| 92 | SPI - Device Assignment | 2017-04-13 → 2017-05-09 (+26d) | 2017-04-17 → 2017-05-11 (+24d) | 5d → 3d |  |  |
| 93 | PWM - Device Assignment | 2017-04-18 → 2017-05-12 (+24d) | 2017-05-05 → 2017-05-30 (+25d) | 18d → 19d |  |  |
| 94 | **SPL-B M.8/D.5** |  | 2017-05-26 → 2017-08-11 (+77d) | 57d → 134d |  |  |
| 99 | **SPL-C M.10/D.6** | 2017-07-07 → 2017-05-17 (-51d) | 2017-07-08 → 2017-07-22 (+14d) | 2d → 67d |  |  |
| 100 | C Samples - M9/P.8 from Neusoft | 2017-07-08 → 2017-05-17 (-52d) | 2017-07-08 → 2017-05-17 (-52d) |  |  |  |
| 101 | **Boot Time Optimizations** |  | 2017-04-12 → 2017-05-08 (+26d) | 44d → 70d |  |  |
| 106 | Quantify and investigate any opportunities for optimizing boot time w.r.t NFS based FS. | 2017-04-12 → 2017-05-08 (+26d) | 2017-04-12 → 2017-05-08 (+26d) |  |  |  |
| 108 | **Code clean up (umbrella task)** |  | 2017-04-15 → 2017-05-11 (+26d) | 34d → 60d | 85% → 100% |  |
| 109 | Fix redundant header inclusions across the x64 Hypervisor code base | 2017-04-12 → 2017-05-08 (+26d) | 2017-04-12 → 2017-05-08 (+26d) |  |  |  |
| 110 | Error checking across the x64 Hypervisor code base |  | 2017-04-03 → 2017-04-10 (+7d) | 1d → 8d |  |  |
| 112 | Remove redundant APIs |  | 2017-04-05 → 2017-04-13 (+8d) | 2d → 10d | 38% → 100% |  |
| 113 | Conform to Nucleus coding standard across code base |  | 2017-03-21 → 2017-04-27 (+37d) | 5d → 42d |  |  |
| 114 | Fix issues with abstractions and code organization | 2017-04-13 → 2017-05-09 (+26d) | 2017-04-13 → 2017-05-09 (+26d) |  |  |  |
| 115 | Implement consistent debug logging | 2017-04-14 → 2017-05-10 (+26d) | 2017-04-14 → 2017-05-10 (+26d) |  |  |  |
| 117 | TODO: Move ACPI_Init to hv_vm_acpi | 2017-04-15 → 2017-05-11 (+26d) | 2017-04-15 → 2017-05-11 (+26d) |  |  |  |
| 119 | **Backlog** |  | 2017-04-20 → 2017-05-15 (+25d) | 100d → 125d | 61% → 67% |  |
| 120 | wifi driver fails to load in the IVI after a vmshutdown and vmboot sequence | 2017-04-12 → 2017-05-08 (+26d) | 2017-04-13 → 2017-05-09 (+26d) |  |  |  |
| 121 | I2C Bus 3 (LPSS_I2C_3) is assigned to cluster (vm0) | 2017-04-14 → 2017-02-26 (-47d) | 2017-04-14 → 2017-02-27 (-46d) | 1d → 2d |  |  |
| 123 | GPIO virtualization | 2017-04-15 → 2017-05-10 (+25d) | 2017-04-15 → 2017-05-10 (+25d) |  |  |  |
| 125 | Enablement of 4 Displays (MIPI-DSI) bridge | 2017-04-16 → 2017-04-12 (-4d) | 2017-04-16 → 2017-04-21 (+5d) | 1d → 10d |  | resources none → ziaa |
| 126 | 3x 1080p video decoding support | 2017-04-17 → 2017-05-11 (+24d) | 2017-04-17 → 2017-05-11 (+24d) |  |  |  |
| 128 | Remove dependency on MPS code. |  |  |  | 100% → 138% |  |
| 129 | Validate ACPI enablement to confirm the resource partitioning requirements for Neusoft HS7 system are met | 2017-04-18 → 2017-02-23 (-54d) | 2017-04-18 → 2017-02-24 (-53d) | 1d → 2d |  |  |
| 130 | Remove the delay between VM boots | 2017-04-19 → 2017-05-12 (+23d) | 2017-04-19 → 2017-05-12 (+23d) |  |  |  |
| 132 | Black Duck analysis | 2017-04-20 → 2017-05-13 (+23d) | 2017-04-20 → 2017-05-15 (+25d) | 1d → 3d |  |  |
| 136 | **Stability/Improvements** |  | 2017-04-13 → 2017-05-09 (+26d) | 57d → 83d |  |  |
| 137 | HVM loader clean-up | 2017-04-12 → 2017-05-08 (+26d) | 2017-04-12 → 2017-05-08 (+26d) |  |  |  |
| 138 | Verify GPU recovery | 2017-04-13 → 2017-05-09 (+26d) | 2017-04-13 → 2017-05-09 (+26d) |  |  |  |
| 140 | **Validate Intel Graphics** |  | 2017-04-13 → 2017-05-09 (+26d) | 93d → 119d |  |  |
| 150 | Investigate failing unit tests under VM1 of MEHV | 2017-04-12 → 2017-05-08 (+26d) | 2017-04-12 → 2017-05-08 (+26d) |  |  |  |
| 151 | Investigate GPU performance regression with MEVH | 2017-04-13 → 2017-05-09 (+26d) | 2017-04-13 → 2017-05-09 (+26d) |  |  |  |

## Version 9 (saved 2017-05-12)

Note of the change: ff

Last finish stays 2017-08-11.

Changed:

| ID | Task | Start | Finish | Duration | Complete |
| --- | --- | --- | --- | --- | --- |
| 80 | **SPL-A3** |  | 2017-05-09 → 2017-05-12 (+3d) | 47d → 50d |  |
| 85 | Enabling display on neusoft using XEN POC5 |  | 2017-04-18 → 2017-04-24 (+6d) | 5d → 11d |  |
| 86 | EPT violation and assertion that occurs rarely | 2017-05-08 → 2017-05-11 (+3d) | 2017-05-08 → 2017-05-11 (+3d) |  |  |
| 89 | ACPI new camera related entries | 2017-05-09 → 2017-05-12 (+3d) | 2017-05-09 → 2017-05-12 (+3d) |  |  |
| 90 | **PCR3** | 2017-05-08 → 2017-05-11 (+3d) | 2017-05-30 → 2017-06-02 (+3d) |  |  |
| 91 | USBMUX Device Assignment | 2017-05-08 → 2017-05-11 (+3d) | 2017-05-08 → 2017-05-11 (+3d) |  |  |
| 92 | SPI - Device Assignment | 2017-05-09 → 2017-05-12 (+3d) | 2017-05-11 → 2017-05-16 (+5d) | 3d → 5d |  |
| 93 | PWM - Device Assignment | 2017-05-12 → 2017-05-17 (+5d) | 2017-05-30 → 2017-06-02 (+3d) | 19d → 17d |  |
| 101 | **Boot Time Optimizations** |  | 2017-05-08 → 2017-05-11 (+3d) | 70d → 73d |  |
| 106 | Quantify and investigate any opportunities for optimizing boot time w.r.t NFS based FS. | 2017-05-08 → 2017-05-11 (+3d) | 2017-05-08 → 2017-05-11 (+3d) |  |  |
| 108 | **Code clean up (umbrella task)** |  | 2017-05-11 → 2017-05-16 (+5d) | 60d → 65d |  |
| 109 | Fix redundant header inclusions across the x64 Hypervisor code base | 2017-05-08 → 2017-05-11 (+3d) | 2017-05-08 → 2017-05-11 (+3d) |  |  |
| 110 | Error checking across the x64 Hypervisor code base |  | 2017-04-10 → 2017-04-11 (+1d) | 8d → 9d |  |
| 114 | Fix issues with abstractions and code organization | 2017-05-09 → 2017-05-12 (+3d) | 2017-05-09 → 2017-05-12 (+3d) |  |  |
| 115 | Implement consistent debug logging | 2017-05-10 → 2017-05-13 (+3d) | 2017-05-10 → 2017-05-15 (+5d) | 1d → 3d |  |
| 117 | TODO: Move ACPI_Init to hv_vm_acpi | 2017-05-11 → 2017-05-16 (+5d) | 2017-05-11 → 2017-05-16 (+5d) |  |  |
| 119 | **Backlog** |  | 2017-05-15 → 2017-05-18 (+3d) | 125d → 128d | 67% → 68% |
| 120 | wifi driver fails to load in the IVI after a vmshutdown and vmboot sequence | 2017-05-08 → 2017-05-11 (+3d) | 2017-05-09 → 2017-05-12 (+3d) |  |  |
| 123 | GPIO virtualization | 2017-05-10 → 2017-05-13 (+3d) | 2017-05-10 → 2017-05-15 (+5d) | 1d → 3d |  |
| 125 | Enablement of 4 Displays (MIPI-DSI) bridge |  | 2017-04-21 → 2017-04-24 (+3d) | 10d → 13d |  |
| 126 | 3x 1080p video decoding support | 2017-05-11 → 2017-05-16 (+5d) | 2017-05-11 → 2017-05-16 (+5d) |  |  |
| 130 | Remove the delay between VM boots | 2017-05-12 → 2017-05-17 (+5d) | 2017-05-12 → 2017-05-17 (+5d) |  |  |
| 132 | Black Duck analysis | 2017-05-13 → 2017-05-18 (+5d) | 2017-05-15 → 2017-05-18 (+3d) | 3d → 1d |  |
| 136 | **Stability/Improvements** |  | 2017-05-09 → 2017-05-12 (+3d) | 83d → 86d |  |
| 137 | HVM loader clean-up | 2017-05-08 → 2017-05-11 (+3d) | 2017-05-08 → 2017-05-11 (+3d) |  |  |
| 138 | Verify GPU recovery | 2017-05-09 → 2017-05-12 (+3d) | 2017-05-09 → 2017-05-12 (+3d) |  |  |
| 140 | **Validate Intel Graphics** |  | 2017-05-09 → 2017-05-12 (+3d) | 119d → 122d |  |
| 150 | Investigate failing unit tests under VM1 of MEHV | 2017-05-08 → 2017-05-11 (+3d) | 2017-05-08 → 2017-05-11 (+3d) |  |  |
| 151 | Investigate GPU performance regression with MEVH | 2017-05-09 → 2017-05-12 (+3d) | 2017-05-09 → 2017-05-12 (+3d) |  |  |

## Version 10 (saved 2017-05-12)

Note of the change: ss

Last finish stays 2017-08-11.

Changed:

| ID | Task | Start | Finish | Duration |
| --- | --- | --- | --- | --- |
| 80 | **SPL-A3** |  | 2017-05-12 → 2017-05-15 (+3d) | 50d → 53d |
| 86 | EPT violation and assertion that occurs rarely | 2017-05-11 → 2017-05-12 (+1d) | 2017-05-11 → 2017-05-12 (+1d) |  |
| 89 | ACPI new camera related entries | 2017-05-12 → 2017-05-13 (+1d) | 2017-05-12 → 2017-05-15 (+3d) | 1d → 3d |
| 90 | **PCR3** | 2017-05-11 → 2017-05-12 (+1d) | 2017-06-02 → 2017-06-05 (+3d) | 23d → 25d |
| 91 | USBMUX Device Assignment | 2017-05-11 → 2017-05-12 (+1d) | 2017-05-11 → 2017-05-12 (+1d) |  |
| 92 | SPI - Device Assignment | 2017-05-12 → 2017-05-13 (+1d) | 2017-05-16 → 2017-05-17 (+1d) |  |
| 93 | PWM - Device Assignment | 2017-05-17 → 2017-05-18 (+1d) | 2017-06-02 → 2017-06-05 (+3d) | 17d → 19d |
| 101 | **Boot Time Optimizations** |  | 2017-05-11 → 2017-05-12 (+1d) | 73d → 74d |
| 106 | Quantify and investigate any opportunities for optimizing boot time w.r.t NFS based FS. | 2017-05-11 → 2017-05-12 (+1d) | 2017-05-11 → 2017-05-12 (+1d) |  |
| 108 | **Code clean up (umbrella task)** |  | 2017-05-16 → 2017-05-17 (+1d) | 65d → 66d |
| 109 | Fix redundant header inclusions across the x64 Hypervisor code base | 2017-05-11 → 2017-05-12 (+1d) | 2017-05-11 → 2017-05-12 (+1d) |  |
| 110 | Error checking across the x64 Hypervisor code base |  | 2017-04-11 → 2017-04-13 (+2d) | 9d → 11d |
| 114 | Fix issues with abstractions and code organization | 2017-05-12 → 2017-05-13 (+1d) | 2017-05-12 → 2017-05-15 (+3d) | 1d → 3d |
| 115 | Implement consistent debug logging | 2017-05-13 → 2017-05-16 (+3d) | 2017-05-15 → 2017-05-16 (+1d) | 3d → 1d |
| 117 | TODO: Move ACPI_Init to hv_vm_acpi | 2017-05-16 → 2017-05-17 (+1d) | 2017-05-16 → 2017-05-17 (+1d) |  |
| 119 | **Backlog** |  | 2017-05-18 → 2017-05-19 (+1d) | 128d → 129d |
| 120 | wifi driver fails to load in the IVI after a vmshutdown and vmboot sequence | 2017-05-11 → 2017-05-12 (+1d) | 2017-05-12 → 2017-05-15 (+3d) | 2d → 4d |
| 123 | GPIO virtualization | 2017-05-13 → 2017-05-16 (+3d) | 2017-05-15 → 2017-05-16 (+1d) | 3d → 1d |
| 126 | 3x 1080p video decoding support | 2017-05-16 → 2017-05-17 (+1d) | 2017-05-16 → 2017-05-17 (+1d) |  |
| 130 | Remove the delay between VM boots | 2017-05-17 → 2017-05-18 (+1d) | 2017-05-17 → 2017-05-18 (+1d) |  |
| 132 | Black Duck analysis | 2017-05-18 → 2017-05-19 (+1d) | 2017-05-18 → 2017-05-19 (+1d) |  |
| 136 | **Stability/Improvements** |  | 2017-05-12 → 2017-05-15 (+3d) | 86d → 89d |
| 137 | HVM loader clean-up | 2017-05-11 → 2017-05-12 (+1d) | 2017-05-11 → 2017-05-12 (+1d) |  |
| 138 | Verify GPU recovery | 2017-05-12 → 2017-05-13 (+1d) | 2017-05-12 → 2017-05-15 (+3d) | 1d → 3d |
| 140 | **Validate Intel Graphics** |  | 2017-05-12 → 2017-05-15 (+3d) | 122d → 125d |
| 150 | Investigate failing unit tests under VM1 of MEHV | 2017-05-11 → 2017-05-12 (+1d) | 2017-05-11 → 2017-05-12 (+1d) |  |
| 151 | Investigate GPU performance regression with MEVH | 2017-05-12 → 2017-05-13 (+1d) | 2017-05-12 → 2017-05-15 (+3d) | 1d → 3d |
