How a schedule from GanttProject changed from version to version. A marks actual dates.

## Version 1 (saved 2017-03-28)

Note of the change: Base

| ID | WBS | Task | Duration | Start | Finish | Complete |
| --- | --- | --- | --- | --- | --- | --- |
| 1 | 1 | **Project** | 61d | 2017-02-13 | 2017-04-14 | 55% |
| 2 | 1.1 | **Unified BSP** | 46d | 2017-02-28 | 2017-04-14 | 43% |
| 3 | 1.1.1 | **New BSP Structure and Integration** | 39d | 2017-02-28 | 2017-04-07 | 47% |
| 4 |  | Unified BSP Interface proposal | 11d | 2017-02-28 | 2017-03-10 | 100% |
| 5 |  | Unifying BSP Initialization flow for NRS and SC BSPs | 2d | 2017-03-28 | 2017-03-29 |  |
| 6 |  | Integration of SC BSP with DM | 3d | 2017-03-27 | 2017-03-29 | 33% |
| 7 |  | Integration of Unified drivers and updated BSPs | 3d | 2017-03-27 | 2017-03-29 |  |
| 8 |  | Integration of Unified drivers and updated BSPs | 3d | 2017-03-28 | 2017-03-30 |  |
| 9 | 1.1.2 | **Unified Serial Driver** | 24d | 2017-03-01 | 2017-03-24 | 76% |
| 10 | 1.1.2.1 | **Design** | 17d | 2017-03-01 | 2017-03-17 | 67% |
| 11 |  | Unified BSP Interface proposal | 17d | 2017-03-01 | 2017-03-17 | 67% |
| 12 |  | Serial Driver implementation | 7d | 2017-03-14 | 2017-03-20 | 98% |
| 13 | 1.1.3 | **Unified Ethernet Driver** | 31d | 2017-03-15 | 2017-04-14 | 27% |
| 14 |  | Define a new BSP and OS driver interface for the Ethernet driver (BSP team and MW team) | 3d | 2017-03-15 | 2017-03-17 | 80% |
| 15 |  | Discuss and finalize the Nucleus Buffers proposal | 6d | 2017-03-22 | 2017-03-27 | 100% |
| 16 |  | Implement Nucleus Buffers support | 11d | 2017-03-28 | 2017-04-07 |  |
| 17 |  | Update LWNET to use the new driver and Nucleus Buffers | 19d | 2017-03-27 | 2017-04-14 | 5% |
| 18 |  | Unified Ethernet driver Implementation for Sabrelite | 12d | 2017-03-20 | 2017-03-31 | 45% |
| 19 | 1.2 | **Device Manager Remodal** | 45d | 2017-02-13 | 2017-03-29 | 80% |
| 20 | 1.2.1 | **Design** | 16d | 2017-02-13 | 2017-02-28 | 100% |
| 21 |  | Device Manager Code Review | 16d | 2017-02-13 | 2017-02-28 | 100% |
| 22 |  | Prepare a proposal to remodal Device Manager | 16d | 2017-02-13 | 2017-02-28 | 100% |
| 23 | 1.2.2 | **Device Manager implementation** | 17d | 2017-03-13 | 2017-03-29 | 45% |
| 24 | 1.2.2.1 | **Device Labels update** | 2d | 2017-03-13 | 2017-03-14 | 100% |
| 25 |  | Implement new labeling scheme for Device Manager | 2d | 2017-03-13 | 2017-03-14 | 100% |
| 26 |  | Update the Device Manager metadata files to generate labels. | 1d | 2017-03-14 | 2017-03-14 | 100% |
| 27 | 1.2.2.2 | **Updates to Device Registry** | 5d | 2017-03-13 | 2017-03-17 | 100% |
| 28 |  | Removal of device sessions form Device Manager. | 1d | 2017-03-13 | 2017-03-13 | 100% |
| 29 |  | Update device Open/Close mechanism to handle removal of device sessions form Device Manager | 2d | 2017-03-16 | 2017-03-17 | 100% |
| 30 | 1.2.2.3 | **Device Functionality Lists** | 14d | 2017-03-14 | 2017-03-27 | 100% |
| 31 |  | Add support of Functionality lists to Device Manager | 0d | 2017-03-28 | 2017-03-28 | -100% |
| 32 |  | Update device registration flow via DVC_Dev_Register. | 1d | 2017-03-15 | 2017-03-15 | 100% |
| 33 |  | Update device unregistration flow via DVC_Dev_Unregister. | 1d | 2017-03-14 | 2017-03-14 | 100% |
| 34 | 1.2.2.4 | **Device Manager New APIs** | 1d | 2017-03-15 | 2017-03-15 | 100% |
| 35 |  | Implement DVC_Dev_Request API | 1d | 2017-03-15 | 2017-03-15 | 100% |
| 36 |  | Implement DVC_Dev_Get_Instance API. | 1d | 2017-03-15 | 2017-03-15 | 100% |
| 37 | 1.2.2.5 | **Device Manager Deprecated APIs** | 1d | 2017-03-16 | 2017-03-16 | 100% |
| 38 |  | Remove Device Manager's deprecated APIs (DVC_Dev_Read/Write and DVC_Dev_IOCTL) | 1d | 2017-03-16 | 2017-03-16 | 100% |
| 39 | 1.2.2.6 | **Device Discovery Mechanism** | 2d | 2017-03-28 | 2017-03-29 |  |
| 40 |  | Remove known_id_list and its references from device discovery | 1d | 2017-03-28 | 2017-03-28 |  |
| 41 |  | Implement APIs and code updated for cases where new device is added to the system | 2d | 2017-03-28 | 2017-03-29 |  |
| 42 |  | Implement APIs and code updated for cases where new listener is added to the system | 2d | 2017-03-28 | 2017-03-29 |  |
| 43 |  | Update internals of DVC_Reg_Change_Search in accordance with the new design proposal. | 2d | 2017-03-28 | 2017-03-29 |  |
| 44 |  | Prototype Power management services with new Device Manager. | 1d | 2017-03-22 | 2017-03-22 | 100% |
| 45 |  | Incorporate Design Review Feedback | 0d | 2017-03-28 | 2017-03-28 | -100% |

## Version 2 (saved 2017-03-30)

Note of the change: newNode

Last finish stays 2017-04-14.

Changed:

| ID | Task | Start | Finish | Duration | Complete |
| --- | --- | --- | --- | --- | --- |
| 1 | **Project** |  |  |  | 55% → 57% |
| 2 | **Unified BSP** |  |  |  | 43% → 45% |
| 5 | Unifying BSP Initialization flow for NRS and SC BSPs | 2017-03-28 → 2017-03-30 (+2d) | 2017-03-29 → 2017-03-31 (+2d) |  |  |
| 8 | Integration of Unified drivers and updated BSPs | 2017-03-28 → 2017-03-30 (+2d) | 2017-03-30 → 2017-04-03 (+4d) | 3d → 5d |  |
| 9 | **Unified Serial Driver** |  | 2017-03-24 → 2017-04-07 (+14d) | 24d → 38d |  |
| 13 | **Unified Ethernet Driver** |  |  |  | 27% → 31% |
| 16 | Implement Nucleus Buffers support | 2017-03-28 → 2017-03-30 (+2d) |  | 11d → 9d |  |
| 17 | Update LWNET to use the new driver and Nucleus Buffers |  |  |  | 5% → 10% |
| 18 | Unified Ethernet driver Implementation for Sabrelite |  |  |  | 45% → 55% |
| 19 | **Device Manager Remodal** |  | 2017-03-29 → 2017-03-31 (+2d) | 45d → 47d | 80% → 84% |
| 23 | **Device Manager implementation** |  | 2017-03-29 → 2017-03-31 (+2d) | 17d → 19d | 45% → 56% |
| 31 | Add support of Functionality lists to Device Manager | 2017-03-28 → 2017-03-30 (+2d) | 2017-03-28 → 2017-03-30 (+2d) | 0d → -2d |  |
| 39 | **Device Discovery Mechanism** | 2017-03-28 → 2017-03-29 (+1d) | 2017-03-29 → 2017-03-31 (+2d) | 2d → 3d | 0% → 20% |
| 40 | Remove known_id_list and its references from device discovery | 2017-03-28 → 2017-03-30 (+2d) | 2017-03-28 → 2017-03-30 (+2d) |  |  |
| 41 | Implement APIs and code updated for cases where new device is added to the system | 2017-03-28 → 2017-03-29 (+1d) | 2017-03-29 → 2017-03-30 (+1d) |  | 0% → 69% |
| 42 | Implement APIs and code updated for cases where new listener is added to the system | 2017-03-28 → 2017-03-30 (+2d) | 2017-03-29 → 2017-03-31 (+2d) |  |  |
| 43 | Update internals of DVC_Reg_Change_Search in accordance with the new design proposal. | 2017-03-28 → 2017-03-30 (+2d) | 2017-03-29 → 2017-03-31 (+2d) |  |  |
| 45 | Incorporate Design Review Feedback | 2017-03-28 → 2017-03-30 (+2d) | 2017-03-28 → 2017-03-30 (+2d) | 0d → -2d |  |

## Version 3 (saved 2017-03-31)

Note of the change: new

Last finish stays 2017-04-14.

Added:

| ID | Task | Duration | Start | Finish | Resources |
| --- | --- | --- | --- | --- | --- |
| 44 | **Prototype Power management services** | 10d | 2017-03-22 | 2017-03-31 |  |
| 46 | Integrate functionality list to power services | 2d | 2017-03-30 | 2017-03-31 | msalman |

Changed:

| ID | Task | Start | Finish | Duration | Complete |
| --- | --- | --- | --- | --- | --- |
| 5 | Unifying BSP Initialization flow for NRS and SC BSPs | 2017-03-30 → 2017-03-31 (+1d) | 2017-03-31 → 2017-04-03 (+3d) | 2d → 4d |  |
| 7 | Integration of Unified drivers and updated BSPs | 2017-03-27 → 2017-04-04 (+8d) | 2017-03-29 → 2017-04-06 (+8d) |  |  |
| 8 | Integration of Unified drivers and updated BSPs | 2017-03-30 → 2017-04-07 (+8d) | 2017-04-03 → 2017-04-11 (+8d) |  |  |
| 16 | Implement Nucleus Buffers support | 2017-03-30 → 2017-03-31 (+1d) |  | 9d → 8d |  |
| 19 | **Device Manager Remodal** |  | 2017-03-31 → 2017-04-03 (+3d) | 47d → 50d | 84% → 82% |
| 23 | **Device Manager implementation** |  | 2017-03-31 → 2017-04-03 (+3d) | 19d → 22d | 56% → 54% |
| 31 | Add support of Functionality lists to Device Manager | 2017-03-30 → 2017-03-31 (+1d) | 2017-03-30 → 2017-03-31 (+1d) | -2d → -3d |  |
| 39 | **Device Discovery Mechanism** |  | 2017-03-31 → 2017-04-03 (+3d) | 3d → 6d |  |
| 40 | Remove known_id_list and its references from device discovery | 2017-03-30 → 2017-03-31 (+1d) | 2017-03-30 → 2017-03-31 (+1d) |  |  |
| 42 | Implement APIs and code updated for cases where new listener is added to the system | 2017-03-30 → 2017-04-01 (+2d) | 2017-03-31 → 2017-04-04 (+4d) | 2d → 4d |  |
| 43 | Update internals of DVC_Reg_Change_Search in accordance with the new design proposal. | 2017-03-30 → 2017-04-05 (+6d) | 2017-03-31 → 2017-04-06 (+6d) |  |  |
| 47 | Incorporate Design Review Feedback | 2017-03-30 → 2017-03-31 (+1d) | 2017-03-30 → 2017-03-31 (+1d) | -2d → -3d |  |

## Version 4 (saved 2017-03-31)

Note of the change: s

Last finish stays 2017-04-14. Complete tasks 14 → 17.

Changed:

| ID | Task | Start | Finish | Duration | Complete |
| --- | --- | --- | --- | --- | --- |
| 1 | **Project** |  |  |  | 57% → 62% |
| 2 | **Unified BSP** |  |  |  | 45% → 46% |
| 13 | **Unified Ethernet Driver** |  |  |  | 31% → 34% |
| 16 | Update LWNET to use the new driver and Nucleus Buffers |  |  |  | 10% → 17% |
| 19 | **Device Manager Remodal** |  | 2017-04-03 → 2017-03-31 (-3d) | 50d → 47d | 82% → 98% |
| 23 | **Device Manager implementation** |  | 2017-04-03 → 2017-03-31 (-3d) | 22d → 19d | 54% → 94% |
| 39 | **Device Discovery Mechanism** |  | 2017-04-03 → 2017-03-31 (-3d) | 6d → 3d | 20% → 82% |
| 40 | Remove known_id_list and its references from device discovery |  |  |  | 0% → -100% |
| 42 | Implement APIs and code updated for cases where new listener is added to the system | 2017-04-01 → 2017-03-31 (-1d) | 2017-04-04 → 2017-03-31 (-4d) | 4d → 1d | 0% → 100% |
| 43 | Update internals of DVC_Reg_Change_Search in accordance with the new design proposal. | 2017-04-05 → 2017-03-31 (-5d) | 2017-04-06 → 2017-03-31 (-6d) | 2d → 1d | 0% → 100% |
| 44 | **Prototype Power management services** |  |  |  | 44% → 100% |
| 46 | Integrate functionality list to power services |  |  |  | 38% → 100% |

## Version 5 (saved 2017-04-08)

Note of the change: dashboard

Last finish stays 2017-04-14. Complete tasks 17 → 22.

Added:

| ID | Task | Duration | Start | Finish | Resources |
| --- | --- | --- | --- | --- | --- |
| 2 | **POC-Phase-1** | 61d | 2017-02-13 | 2017-04-14 |  |
| 17 | Update LWNET to use the new buffers | 19d | 2017-03-27 | 2017-04-14 | muusman |
| 49 | **Backlog** | 3d | 2017-04-08 | 2017-04-10 |  |
| 50 | Investigate if DV_DEV_ID can be replaced by DV_DEV_HANDLE | 3d | 2017-04-08 | 2017-04-10 |  |
| 51 | Investigate if we can remove lable_list and label_cnt from open functions for devices. | 1d | 2017-04-11 | 2017-04-11 |  |

Removed: 15 Implement Nucleus Buffers support

Changed:

| ID | Task | Start | Finish | Duration | Complete | Other |
| --- | --- | --- | --- | --- | --- | --- |
| 1 | **Project** |  |  |  | 62% → 74% |  |
| 3 | **Unified BSP** |  |  |  | 46% → 65% |  |
| 4 | **New BSP Structure and Integration** |  | 2017-04-07 → 2017-04-12 (+5d) | 39d → 44d | 47% → 80% |  |
| 6 | Unifying BSP Initialization flow for NRS and SC BSPs |  |  |  | 0% → 50% |  |
| 7 | Integration of SC BSP with DM |  | 2017-03-29 → 2017-03-28 (-1d) | 3d → 2d | 33% → 100% |  |
| 8 | Integration of Unified drivers and updated BSPs | 2017-04-07 → 2017-03-29 (-9d) | 2017-04-11 → 2017-04-06 (-5d) | 5d → 9d | 0% → 100% | resources mirfan → ashahid |
| 9 | Integration of Unified drivers and updated BSPs | 2017-04-04 → 2017-04-08 (+4d) | 2017-04-06 → 2017-04-12 (+6d) | 3d → 5d |  | resources ashahid → mirfan |
| 10 | **Unified Serial Driver** |  | 2017-04-07 → 2017-03-20 (-18d) | 38d → 20d | 76% → 99% |  |
| 11 | **Design** |  | 2017-03-17 → 2017-03-10 (-7d) | 17d → 10d | 67% → 100% |  |
| 12 | Unified BSP Interface proposal |  | 2017-03-17 → 2017-03-10 (-7d) | 17d → 10d | 67% → 100% |  |
| 14 | **Unified Ethernet Driver** |  |  |  | 34% → 46% |  |
| 16 | Implement Buffers support and interface LWNET with new Ethernet driver | 2017-03-27 → 2017-04-05 (+9d) | 2017-04-14 → 2017-04-07 (-7d) | 19d → 3d | 17% → 10% | was named Update LWNET to use the new driver and Nucleus Buffers; resources muusman → jsyed |
| 18 | Define a new BSP and OS driver interface for the Ethernet driver (BSP team and MW team) |  | 2017-03-17 → 2017-03-20 (+3d) | 3d → 6d | 80% → 100% |  |
| 19 | Unified Ethernet driver Implementation for Sabrelite |  |  |  | 55% → 85% |  |
| 20 | **Device Manager Remodal** |  |  |  | 98% → 100% |  |
| 24 | **Device Manager implementation** |  |  |  | 94% → 100% |  |
| 32 | Add support of Functionality lists to Device Manager | 2017-03-31 → 2017-04-08 (+8d) | 2017-03-31 → 2017-04-08 (+8d) | -3d → -11d |  |  |
| 40 | **Device Discovery Mechanism** |  |  |  | 82% → 100% |  |
| 41 | Remove known_id_list and its references from device discovery | 2017-03-31 → 2017-04-08 (+8d) | 2017-03-31 → 2017-04-08 (+8d) | 1d → -7d |  |  |
| 42 | Implement APIs and code updated for cases where new device is added to the system |  | 2017-03-30 → 2017-03-29 (-1d) | 2d → 1d | 69% → 100% |  |
| 48 | Incorporate Design Review Feedback | 2017-03-31 → 2017-04-08 (+8d) | 2017-03-31 → 2017-04-08 (+8d) | -3d → -11d |  |  |

## Version 6 (saved 2017-04-09)

Note of the change: n

Last finish stays 2017-04-14.

Changed:

| ID | Task | Start | Finish | Duration |
| --- | --- | --- | --- | --- |
| 9 | Integration of Unified drivers and updated BSPs | 2017-04-08 → 2017-04-09 (+1d) |  | 5d → 4d |
| 32 | Add support of Functionality lists to Device Manager | 2017-04-08 → 2017-04-09 (+1d) | 2017-04-08 → 2017-04-09 (+1d) | -11d → -12d |
| 41 | Remove known_id_list and its references from device discovery | 2017-04-08 → 2017-04-09 (+1d) | 2017-04-08 → 2017-04-09 (+1d) | -7d → -8d |
| 48 | Incorporate Design Review Feedback | 2017-04-08 → 2017-04-09 (+1d) | 2017-04-08 → 2017-04-09 (+1d) | -11d → -12d |
| 49 | **Backlog** | 2017-04-08 → 2017-04-09 (+1d) |  | 3d → 2d |
| 50 | Investigate if DV_DEV_ID can be replaced by DV_DEV_HANDLE | 2017-04-08 → 2017-04-09 (+1d) |  | 3d → 2d |

## Version 7 (saved 2017-04-10)

Note of the change: d

Last finish stays 2017-04-14. Complete tasks 22 → 24.

Added:

| ID | Task | Duration | Start | Finish | Resources |
| --- | --- | --- | --- | --- | --- |
| 19 | Unified Ethernet driver Implementation for QEMU (realview_eb_ct926ejs) | 9d | 2017-04-04 | 2017-04-12 | ansarif |
| 48 | modify DVC_Dev_ID_Open to return device handle if device is already opened in case of power labels | 1d | 2017-04-10 | 2017-04-10 | msalman |
| 49 | Modify DVC_Dev_Open to return functionality list after opening device | 1d | 2017-04-10 | 2017-04-10 | msalman |

Removed: 9 Integration of Unified drivers and updated BSPs

Changed:

| ID | Task | Start | Finish | Duration | Complete |
| --- | --- | --- | --- | --- | --- |
| 1 | **Project** |  |  |  | 74% → 79% |
| 2 | **POC-Phase-1** |  |  |  | 76% → 81% |
| 3 | **Unified BSP** |  |  |  | 65% → 72% |
| 4 | **New BSP Structure and Integration** |  | 2017-04-12 → 2017-04-06 (-6d) | 44d → 38d | 80% → 94% |
| 13 | **Unified Ethernet Driver** |  |  |  | 46% → 57% |
| 16 | Update LWNET to use the new buffers |  |  |  | 22% → 45% |
| 20 | **Device Manager Remodal** |  | 2017-03-31 → 2017-04-10 (+10d) | 47d → 57d |  |
| 24 | **Device Manager implementation** |  | 2017-03-31 → 2017-04-10 (+10d) | 19d → 29d |  |
| 32 | Add support of Functionality lists to Device Manager | 2017-04-09 → 2017-04-10 (+1d) | 2017-04-09 → 2017-04-10 (+1d) | -12d → -13d |  |
| 41 | Remove known_id_list and its references from device discovery | 2017-04-09 → 2017-04-10 (+1d) | 2017-04-09 → 2017-04-10 (+1d) | -8d → -9d |  |
| 45 | **Prototype Power management services** |  | 2017-03-31 → 2017-04-10 (+10d) | 10d → 20d |  |
| 50 | Incorporate Design Review Feedback | 2017-04-09 → 2017-04-10 (+1d) | 2017-04-09 → 2017-04-10 (+1d) | -12d → -13d |  |
| 51 | **Backlog** | 2017-04-09 → 2017-04-10 (+1d) | 2017-04-10 → 2017-04-11 (+1d) |  |  |
| 52 | Investigate if DV_DEV_ID can be replaced by DV_DEV_HANDLE | 2017-04-09 → 2017-04-10 (+1d) |  | 2d → 1d |  |

## Version 8 (saved 2017-04-12)

Note of the change: dd

Last finish stays 2017-04-14.

Added:

| ID | Task | Duration | Start | Finish | Resources |
| --- | --- | --- | --- | --- | --- |
| 54 | Cleanup for SC and NRS BSPs/OS changes | 1d | 2017-04-10 | 2017-04-10 | ashahid |

Changed:

| ID | Task | Start | Finish | Duration | Complete |
| --- | --- | --- | --- | --- | --- |
| 1 | **Project** |  |  |  | 79% → 78% |
| 2 | **POC-Phase-1** |  |  |  | 81% → 82% |
| 3 | **Unified BSP** |  |  |  | 72% → 74% |
| 13 | **Unified Ethernet Driver** |  |  |  | 57% → 60% |
| 18 | Unified Ethernet driver Implementation for Sabrelite |  |  |  | 85% → 105% |
| 32 | Add support of Functionality lists to Device Manager | 2017-04-10 → 2017-04-12 (+2d) | 2017-04-10 → 2017-04-12 (+2d) | -13d → -15d |  |
| 41 | Remove known_id_list and its references from device discovery | 2017-04-10 → 2017-04-12 (+2d) | 2017-04-10 → 2017-04-12 (+2d) | -9d → -11d |  |
| 50 | Incorporate Design Review Feedback | 2017-04-10 → 2017-04-12 (+2d) | 2017-04-10 → 2017-04-12 (+2d) | -13d → -15d |  |
| 51 | **Backlog** |  | 2017-04-11 → 2017-04-13 (+2d) | 2d → 4d | 0% → 14% |
| 52 | Investigate if DV_DEV_ID can be replaced by DV_DEV_HANDLE | 2017-04-10 → 2017-04-12 (+2d) | 2017-04-10 → 2017-04-12 (+2d) |  |  |
| 53 | Investigate if we can remove lable_list and label_cnt from open functions for devices. | 2017-04-11 → 2017-04-13 (+2d) | 2017-04-11 → 2017-04-13 (+2d) |  |  |

## Version 9 (saved 2017-05-09)

Note of the change: sdsd

Last finish 2017-04-14 → 2017-05-19 (+35d). Complete tasks 24 → 50.

Added:

| ID | Task | Duration | Start | Finish | Resources |
| --- | --- | --- | --- | --- | --- |
| 3 | **Misc** | 17d | 2017-04-10 | 2017-04-26 |  |
| 5 | Improvement required in newly designed device discovery mechanism. | 2d | 2017-04-25 | 2017-04-26 |  |
| 6 | Investigate the need for DVS_Label_Copy() function. | 2d | 2017-04-25 | 2017-04-26 | ashahid |
| 7 | Replace CPU IOCTLs with new device manager's functionality list. | 2d | 2017-04-19 | 2017-04-20 | mkaleem |
| 8 | Incorporate Code review feedback on lwserial/DM and other unification changes. | 2d | 2017-04-19 | 2017-04-20 | ashahid |
| 10 | Allow multiple open calls for a device | 2d | 2017-04-25 | 2017-04-26 | ashahid |
| 11 | Documentation | 4d | 2017-04-18 | 2017-04-21 |  |
| 12 | Update DVFS, UII and Hibernate services to use new device manager. | 4d | 2017-04-18 | 2017-04-21 | msalman |
| 19 | Structural updates to BSP v4.0 | 6d | 2017-04-20 | 2017-04-25 | mirfan |
| 62 | **Phase-2** | 23d | 2017-04-27 | 2017-05-19 |  |
| 63 | **BSP Restructure** | 2d | 2017-05-08 | 2017-05-09 |  |
| 64 | Revisit HAL and analyze it further for completion. | 2d | 2017-05-08 | 2017-05-09 | ashahid |
| 65 | **DM Investigations** | 16d | 2017-04-27 | 2017-05-12 |  |
| 66 | Explore some possible optimizations. | 2d | 2017-05-08 | 2017-05-09 | ashahid |
| 67 | Explore DVC_Reg_Change_Search() and device discovery mechanism for possible optimizations | 6d | 2017-04-27 | 2017-05-02 | ashahid |
| 68 | Investigate possibility of using string labels instead of 16-bit numeric labels. | 2d | 2017-05-10 | 2017-05-11 | waqarh |
| 70 | Investigate if we still need both Active Command Count and locking mechanism | 1d | 2017-05-03 | 2017-05-03 | mirfan |
| 71 | Investigate if DVC_Dev_ID_Get() can be made internal | 1d | 2017-05-03 | 2017-05-03 | mirfan |
| 72 | Explore if there's a way of handling power services other than having a label for it. | 1d | 2017-05-12 | 2017-05-12 | mirfan |
| 73 | **DM Improvements** | 16d | 2017-04-27 | 2017-05-12 |  |
| 74 | Update DVFS, UII and Hibernate services to use new device manager. | 1d | 2017-04-27 | 2017-04-27 | msalman |
| 75 | DVC_Reg_Change_Notify calls NU_Obtain_Semaphore which is potentially harmful when called from non-task context | 1d | 2017-05-08 | 2017-05-08 | ashahid |
| 76 | Update NU_PM_Restore_Hibernate_Device() function to use updated DVS_Dev_Handle_Get() logic | 2d | 2017-05-01 | 2017-05-02 | msalman |
| 77 | DVC_Dev_Open() should take label instead of a pointer to label in parameter. | 1d | 2017-05-09 | 2017-05-09 | mkaleem |
| 78 | Some DM functions needs to be complied out of SC build others to be removed completely | 1d | 2017-05-10 | 2017-05-10 | mkaleem |
| 79 | Update source code of DM w.r.t. Nucleus's coding standard | 2d | 2017-05-11 | 2017-05-12 | mkaleem |
| 80 | Update and test the device's unregistration and close flows. | 1d | 2017-04-28 | 2017-04-28 | mirfan |
| 81 | Remove externs for system memory and replace it by retrieval via API | 1d | 2017-04-27 | 2017-04-27 | mirfan |
| 82 | The DVC_Dev_Register() API should not call NU_Sleep() | 1d | 2017-04-27 | 2017-04-27 | mirfan |
| 83 | Do not create an EventGroup for every device. | 2d | 2017-04-27 | 2017-04-28 | mirfan |
| 84 | Integration | 3d | 2017-05-08 | 2017-05-10 |  |
| 86 | Need to implement a mechanism to report device busy status to device manager. | 3d | 2017-05-08 | 2017-05-10 | rasheed |
| 87 | Add function headers to HAL | 1d | 2017-05-11 | 2017-05-11 | ashahid |
| 88 | Update nu_bsp_drvr_serial_pl011_init() to support runlevel start/stop | 1d | 2017-05-12 | 2017-05-12 | ashahid |
| 89 | Implement NU_Serial_Configure() API | 3d | 2017-05-13 | 2017-05-15 | ashahid |
| 90 | Fix Serial_Tgt_Read() function to check for available data before reading it. | 1d | 2017-05-16 | 2017-05-16 | ashahid |
| 91 | Add DVC_Dev_Config() API | 2d | 2017-05-17 | 2017-05-18 | ashahid |
| 92 | Enable reads from registry in DM | 1d | 2017-05-19 | 2017-05-19 | ashahid |

Changed:

| ID | Task | Start | Finish | Duration | Complete | Other |
| --- | --- | --- | --- | --- | --- | --- |
| 1 | **Project** |  | 2017-04-14 → 2017-05-19 (+35d) | 61d → 96d | 78% → 85% |  |
| 2 | **POC-Phase-1** |  | 2017-04-14 → 2017-04-26 (+12d) | 61d → 73d | 82% → 100% |  |
| 4 | Cleanup for SC and NRS BSPs/OS changes |  | 2017-04-10 → 2017-04-12 (+2d) | 1d → 3d | 20% → 100% |  |
| 9 | Investigate if we can remove lable_list and label_cnt from open functions for devices. | 2017-04-13 → 2017-04-25 (+12d) | 2017-04-13 → 2017-04-26 (+13d) | 1d → 2d | 0% → 100% | resources none → ashahid |
| 13 | **Unified BSP** |  | 2017-04-14 → 2017-04-25 (+11d) | 46d → 57d | 74% → 100% |  |
| 14 | **New BSP Structure and Integration** |  | 2017-04-06 → 2017-04-25 (+19d) | 38d → 57d | 94% → 100% |  |
| 16 | Unifying BSP Initialization flow for NRS and SC BSPs |  | 2017-04-03 → 2017-03-31 (-3d) | 4d → 1d | 50% → 100% |  |
| 20 | **Unified Serial Driver** |  | 2017-03-20 → 2017-04-17 (+28d) | 20d → 48d | 99% → 100% |  |
| 21 | **Design** | 2017-02-13 → 2017-03-01 (+16d) | 2017-02-28 → 2017-04-17 (+48d) | 16d → 48d |  |  |
| 23 | Serial Driver implementation |  | 2017-03-20 → 2017-03-24 (+4d) | 7d → 11d | 98% → 100% |  |
| 24 | **Unified Ethernet Driver** |  | 2017-04-14 → 2017-04-17 (+3d) | 31d → 34d | 60% → 100% |  |
| 26 | Implement Buffers support and interface LWNET with new Ethernet driver |  | 2017-04-07 → 2017-04-14 (+7d) | 3d → 10d | 10% → 100% |  |
| 27 | Update LWNET to use the new buffers |  |  |  | 45% → 100% |  |
| 29 | Unified Ethernet driver Implementation for Sabrelite |  | 2017-03-31 → 2017-04-11 (+11d) | 12d → 23d | 105% → 100% |  |
| 30 | Unified Ethernet driver Implementation for QEMU (realview_eb_ct926ejs) |  | 2017-04-12 → 2017-04-07 (-5d) | 9d → 4d | 75% → 100% |  |
| 31 | **Device Manager Remodal** |  | 2017-04-10 → 2017-04-17 (+7d) | 57d → 64d |  |  |
| 32 | **Design** | 2017-03-01 → 2017-02-13 (-16d) | 2017-03-10 → 2017-04-17 (+38d) | 10d → 64d |  |  |
| 35 | **Device Manager implementation** | 2017-03-13 → 2017-03-09 (-4d) | 2017-04-10 → 2017-04-17 (+7d) | 29d → 40d |  |  |
| 39 | **Updates to Device Registry** |  | 2017-03-17 → 2017-04-04 (+18d) | 5d → 23d |  |  |
| 42 | **Device Functionality Lists** |  | 2017-03-27 → 2017-04-04 (+8d) | 14d → 22d |  |  |
| 43 | Add support of Functionality lists to Device Manager | 2017-04-12 → 2017-03-26 (-17d) | 2017-04-12 → 2017-03-27 (-16d) | -15d → 2d | -100% → 100% |  |
| 46 | **Device Manager New APIs** |  | 2017-03-15 → 2017-04-04 (+20d) | 1d → 21d |  |  |
| 49 | **Device Manager Deprecated APIs** |  | 2017-03-16 → 2017-03-29 (+13d) | 1d → 14d |  |  |
| 51 | **Device Discovery Mechanism** |  | 2017-03-31 → 2017-04-04 (+4d) | 3d → 7d |  |  |
| 52 | Remove known_id_list and its references from device discovery | 2017-04-12 → 2017-03-30 (-13d) | 2017-04-12 → 2017-03-31 (-12d) | -11d → 2d | -100% → 100% |  |
| 61 | Incorporate Design Review Feedback | 2017-04-12 → 2017-03-09 (-34d) | 2017-04-12 → 2017-03-13 (-30d) | -15d → 5d | -100% → 100% |  |
| 69 | Investigate if DV_DEV_ID can be replaced by DV_DEV_HANDLE | 2017-04-12 → 2017-05-02 (+20d) | 2017-04-12 → 2017-05-02 (+20d) |  | 0% → 100% | resources none → mirfan |
| 85 | **Backlog** | 2017-04-10 → 2017-05-08 (+28d) | 2017-04-13 → 2017-05-19 (+36d) | 4d → 12d | 14% → 0% |  |

## Version 10 (saved 2017-05-12)

Note of the change: ff

Last finish 2017-05-19 → 2017-05-25 (+6d). Complete tasks 50 → 55.

Changed:

| ID | Task | Start | Finish | Duration | Complete |
| --- | --- | --- | --- | --- | --- |
| 1 | **Project** |  | 2017-05-19 → 2017-05-25 (+6d) | 96d → 102d | 85% → 89% |
| 62 | **Phase-2** |  |  |  | 22% → 49% |
| 63 | **BSP Restructure** | 2017-05-08 → 2017-05-12 (+4d) | 2017-05-09 → 2017-05-15 (+6d) | 2d → 4d |  |
| 64 | Revisit HAL and analyze it further for completion. | 2017-05-08 → 2017-05-12 (+4d) | 2017-05-09 → 2017-05-15 (+6d) | 2d → 4d |  |
| 65 | **DM Investigations** |  | 2017-05-12 → 2017-05-18 (+6d) | 16d → 22d | 18% → 24% |
| 66 | Explore some possible optimizations. | 2017-05-08 → 2017-05-12 (+4d) | 2017-05-09 → 2017-05-15 (+6d) | 2d → 4d |  |
| 67 | Explore DVC_Reg_Change_Search() and device discovery mechanism for possible optimizations |  | 2017-05-02 → 2017-04-28 (-4d) | 6d → 2d | 33% → 100% |
| 68 | Investigate possibility of using string labels instead of 16-bit numeric labels. | 2017-05-10 → 2017-05-16 (+6d) | 2017-05-11 → 2017-05-17 (+6d) |  |  |
| 72 | Explore if there's a way of handling power services other than having a label for it. | 2017-05-12 → 2017-05-18 (+6d) | 2017-05-12 → 2017-05-18 (+6d) |  |  |
| 73 | **DM Improvements** |  | 2017-05-12 → 2017-05-10 (-2d) | 16d → 14d | 40% → 100% |
| 75 | DVC_Reg_Change_Notify calls NU_Obtain_Semaphore which is potentially harmful when called from non-task context |  | 2017-05-08 → 2017-05-09 (+1d) | 1d → 2d | 0% → 100% |
| 77 | DVC_Dev_Open() should take label instead of a pointer to label in parameter. | 2017-05-09 → 2017-05-08 (-1d) |  | 1d → 2d | 0% → 100% |
| 78 | Some DM functions needs to be complied out of SC build others to be removed completely | 2017-05-10 → 2017-05-08 (-2d) | 2017-05-10 → 2017-05-09 (-1d) | 1d → 2d | 0% → 100% |
| 79 | Update source code of DM w.r.t. Nucleus's coding standard | 2017-05-11 → 2017-05-09 (-2d) | 2017-05-12 → 2017-05-10 (-2d) |  | 0% → 100% |
| 84 | Integration | 2017-05-08 → 2017-05-12 (+4d) | 2017-05-10 → 2017-05-16 (+6d) | 3d → 5d |  |
| 85 | **Backlog** | 2017-05-08 → 2017-05-12 (+4d) | 2017-05-19 → 2017-05-25 (+6d) | 12d → 14d |  |
| 86 | Need to implement a mechanism to report device busy status to device manager. | 2017-05-08 → 2017-05-12 (+4d) | 2017-05-10 → 2017-05-16 (+6d) | 3d → 5d |  |
| 87 | Add function headers to HAL | 2017-05-11 → 2017-05-17 (+6d) | 2017-05-11 → 2017-05-17 (+6d) |  |  |
| 88 | Update nu_bsp_drvr_serial_pl011_init() to support runlevel start/stop | 2017-05-12 → 2017-05-18 (+6d) | 2017-05-12 → 2017-05-18 (+6d) |  |  |
| 89 | Implement NU_Serial_Configure() API | 2017-05-13 → 2017-05-19 (+6d) | 2017-05-15 → 2017-05-19 (+4d) | 3d → 1d |  |
| 90 | Fix Serial_Tgt_Read() function to check for available data before reading it. | 2017-05-16 → 2017-05-20 (+4d) | 2017-05-16 → 2017-05-22 (+6d) | 1d → 3d |  |
| 91 | Add DVC_Dev_Config() API | 2017-05-17 → 2017-05-23 (+6d) | 2017-05-18 → 2017-05-24 (+6d) |  |  |
| 92 | Enable reads from registry in DM | 2017-05-19 → 2017-05-25 (+6d) | 2017-05-19 → 2017-05-25 (+6d) |  |  |
