How a schedule from GanttProject changed from version to version. A marks actual dates.

## Version 1 (saved 2017-05-09)

Note of the change: sss

| ID | WBS | Task | Duration | Start | Finish | Complete |
| --- | --- | --- | --- | --- | --- | --- |
| 1 | 1 | **Project** | 46d | 2017-04-11 | 2017-05-26 | 57% |
| 2 | 1.1 | **Consolidating SabreLite and MF0200 Nodes** | 46d | 2017-04-11 | 2017-05-26 | 57% |
| 3 | 1.1.1 | **Development** | 43d | 2017-04-11 | 2017-05-23 | 68% |
| 4 |  | MEL-1: Verify that NU/MEL config is working and rpmsg communication can be done | 8d | 2017-04-13 | 2017-04-20 | 86% |
| 5 |  | Integrate changes into MEL build system | 0d | 2017-04-20 | 2017-04-20 | -100% |
| 6 |  | MEMF-5: Try out the demo and optimize it for performance | 3d | 2017-05-07 | 2017-05-09 |  |
| 7 |  | MEL-3: Build the Azure demo application with MEL | 1d | 2017-04-19 | 2017-04-19 | 100% |
| 8 |  | MEL-4: Verify switching network communication to USB Ethernet instead of Wi-Fi | 1d | 2017-05-10 | 2017-05-10 |  |
| 9 |  | UI-1: Create new graphics for wall game aligning with the theme of Brain wave | 3d | 2017-04-11 | 2017-04-13 | 100% |
| 10 |  | UI-2: Re-create Brain wave graphics to make space at the bottom for wall game buttons | 3d | 2017-04-12 | 2017-04-14 | 100% |
| 11 |  | UI-3: Graphic Slicing | 22d | 2017-04-12 | 2017-05-03 | 100% |
| 12 |  | UI-4: Readjustment of all screens and placing new elements | 1d | 2017-04-17 | 2017-04-17 | 75% |
| 13 |  | UI-4: Readjustment of all screens and placing new elements | 1d | 2017-04-17 | 2017-04-17 | 75% |
| 14 |  | UI-5: Re work on the application logic to consolidate both UIs | 3d | 2017-04-19 | 2017-04-21 | 50% |
| 15 |  | UI-6: Add sound in game | 1d | 2017-05-11 | 2017-05-11 |  |
| 16 |  | UI-9: Setup the UI in new environment (MEMF) | 4d | 2017-05-12 | 2017-05-15 |  |
| 17 |  | Build MEL(with Qt) and NU images for sabrelite for NU-MEL config | 0d | 2017-04-14 | 2017-04-14 | -100% |
| 18 |  | MEMF-1: Enable MEMF on MF0200 in Nucleus-MEL configuration with required Nucleus and MEL versions | 2d | 2017-04-13 | 2017-04-14 | 100% |
| 19 |  | MEMF-2: Build and run the MEL-Nucleus configuration on MF0200 | 1d | 2017-04-18 | 2017-04-18 | 100% |
| 20 |  | Verify memf and qt support in the resulting image | 0d | 2017-04-14 | 2017-04-14 | -100% |
| 21 |  | Write a basic Qt app | 0d | 2017-04-14 | 2017-04-14 | -100% |
| 22 |  | Integrate matrix multiplication demo in the Qt app | 1d | 2017-04-19 | 2017-04-19 | -100% |
| 23 |  | Verify that Nucleus is able to boot MEL successfully | 0d | 2017-04-20 | 2017-04-20 | -100% |
| 24 |  | MEL-5: Remove Ethernet from MEL so that NU can use that. | 2d | 2017-04-18 | 2017-04-19 | 106% |
| 25 |  | MEL-6: Update, build and run Router App on MEL OS | 3d | 2017-05-16 | 2017-05-18 |  |
| 26 |  | MEL-7: Finalize distro features for MEL build for demo | 1d | 2017-05-19 | 2017-05-19 |  |
| 27 |  | MEL-8: Boot MEL as master with NU remote and commit changes in repo | 1d | 2017-04-18 | 2017-04-18 | 25% |
| 28 |  | MEMF-3: The ethernet device should be assigned to and used by the Nucleus machine | 17d | 2017-04-18 | 2017-05-04 | 100% |
| 29 |  | MEMF-4: Update the Nucleus application in accordance with latest game architecture | 7d | 2017-04-21 | 2017-04-27 | 60% |
| 30 |  | MEL should be able to boot Nucleus remote firmware successfully | 0d | 2017-04-19 | 2017-04-19 | -100% |
| 31 |  | Verify that rpmsg communication is successful between MEL and Nucleus | 0d | 2017-04-19 | 2017-04-19 | -100% |
| 32 |  | Commit changes into CSP MEMF layer | 3d | 2017-05-20 | 2017-05-22 | -100% |
| 33 |  | Create a confluence page for building and booting MEL | 0d | 2017-04-21 | 2017-04-21 | -100% |
| 34 |  | MEL-10: Verify sound output and HDMI display | 1d | 2017-05-04 | 2017-05-04 | 100% |
| 35 |  | Validate complete Game Wall System boot via power cycle (single button) | 1d | 2017-05-23 | 2017-05-23 |  |
| 36 |  | MEL-11: Unable to fetch sources when bulding router app recipe | 1d | 2017-04-21 | 2017-04-21 | 100% |
| 37 |  | MEL-12: Verify wifi connectivity using on-board wirless device. | 1d | 2017-05-04 | 2017-05-04 | 100% |
| 38 |  | MEL-13: Add GeChic touchscreen driver to MEL | 1d | 2017-04-28 | 2017-04-28 | 100% |
| 39 | 1.1.2 | **Integration Milestone** | 20d | 2017-05-07 | 2017-05-26 |  |
| 40 |  | Integration | 13d | 2017-05-07 | 2017-05-19 |  |

## Version 2 (saved 2017-05-12)

Note of the change: ff

Last finish stays 2017-05-26. Complete tasks 11 → 17.

Changed:

| ID | Task | Start | Finish | Duration | Complete | Other |
| --- | --- | --- | --- | --- | --- | --- |
| 1 | **Project** |  |  |  | 57% → 69% |  |
| 2 | **Requirement-1** |  |  |  | 57% → 69% | was named Consolidating SabreLite and MF0200 Nodes |
| 3 | **Development** |  | 2017-05-23 → 2017-05-22 (-1d) | 43d → 42d | 68% → 82% |  |
| 5 | Integrate changes into MEL build system | 2017-04-20 → 2017-04-18 (-2d) | 2017-04-20 → 2017-04-19 (-1d) | 0d → 2d |  |  |
| 6 | MEMF-5: Try out the demo and optimize it for performance |  | 2017-05-09 → 2017-05-08 (-1d) | 3d → 2d | 0% → 100% |  |
| 8 | MEL-4: Verify switching network communication to USB Ethernet instead of Wi-Fi | 2017-05-10 → 2017-05-08 (-2d) | 2017-05-10 → 2017-05-09 (-1d) | 1d → 2d | 0% → 100% |  |
| 12 | UI-4: Readjustment of all screens and placing new elements |  | 2017-04-17 → 2017-05-08 (+21d) | 1d → 22d | 75% → 100% |  |
| 13 | UI-4: Readjustment of all screens and placing new elements |  | 2017-04-17 → 2017-05-08 (+21d) | 1d → 22d | 75% → 100% |  |
| 14 | UI-5: Re work on the application logic to consolidate both UIs |  | 2017-04-21 → 2017-05-04 (+13d) | 3d → 16d | 50% → 100% |  |
| 15 | UI-6: Add sound in game | 2017-05-11 → 2017-05-10 (-1d) | 2017-05-11 → 2017-05-10 (-1d) |  |  |  |
| 16 | UI-9: Setup the UI in new environment (MEMF) | 2017-05-12 → 2017-05-11 (-1d) | 2017-05-15 → 2017-05-12 (-3d) | 4d → 2d |  |  |
| 17 | Build MEL(with Qt) and NU images for sabrelite for NU-MEL config | 2017-04-14 → 2017-04-12 (-2d) | 2017-04-14 → 2017-04-13 (-1d) | 0d → 2d |  |  |
| 20 | Verify memf and qt support in the resulting image | 2017-04-14 → 2017-04-12 (-2d) | 2017-04-14 → 2017-04-13 (-1d) | 0d → 2d |  |  |
| 21 | Write a basic Qt app | 2017-04-14 → 2017-04-12 (-2d) | 2017-04-14 → 2017-04-13 (-1d) | 0d → 2d |  |  |
| 23 | Verify that Nucleus is able to boot MEL successfully | 2017-04-20 → 2017-04-18 (-2d) | 2017-04-20 → 2017-04-19 (-1d) | 0d → 2d |  |  |
| 25 | MEL-6: Update, build and run Router App on MEL OS | 2017-05-16 → 2017-05-13 (-3d) | 2017-05-18 → 2017-05-17 (-1d) | 3d → 5d |  |  |
| 26 | MEL-7: Finalize distro features for MEL build for demo | 2017-05-19 → 2017-05-18 (-1d) | 2017-05-19 → 2017-05-18 (-1d) |  |  |  |
| 29 | MEMF-4: Update the Nucleus application in accordance with latest game architecture |  | 2017-04-27 → 2017-05-03 (+6d) | 7d → 13d | 60% → 100% |  |
| 30 | MEL should be able to boot Nucleus remote firmware successfully | 2017-04-19 → 2017-04-17 (-2d) | 2017-04-19 → 2017-04-18 (-1d) | 0d → 2d |  |  |
| 31 | Verify that rpmsg communication is successful between MEL and Nucleus | 2017-04-19 → 2017-04-17 (-2d) | 2017-04-19 → 2017-04-18 (-1d) | 0d → 2d |  |  |
| 32 | Commit changes into CSP MEMF layer | 2017-05-20 → 2017-05-19 (-1d) | 2017-05-22 → 2017-05-19 (-3d) | 3d → 1d |  |  |
| 33 | Create a confluence page for building and booting MEL | 2017-04-21 → 2017-04-19 (-2d) | 2017-04-21 → 2017-04-20 (-1d) | 0d → 2d |  |  |
| 35 | Validate complete Game Wall System boot via power cycle (single button) | 2017-05-23 → 2017-05-20 (-3d) | 2017-05-23 → 2017-05-22 (-1d) | 1d → 3d |  |  |
| 39 | **Integration Milestone** | 2017-05-07 → 2017-05-10 (+3d) |  | 20d → 17d |  |  |
| 40 | Integration | 2017-05-07 → 2017-05-10 (+3d) | 2017-05-19 → 2017-05-23 (+4d) | 13d → 14d |  |  |
