How a schedule from GanttProject changed from version to version. A marks actual dates.

## Version 1 (saved 2017-05-09)

Note of the change: sss

| ID | WBS | Task | Duration | Start | Finish | Complete |
| --- | --- | --- | --- | --- | --- | --- |
| 1 | 1 | **Project** | 29d | 2017-05-02 | 2017-05-30 | 42% |
| 2 | 1.1 | **Weather ford Eval** | 29d | 2017-05-02 | 2017-05-30 | 42% |
| 3 | 1.1.1 | **Preliminary Tasks** | 2d | 2017-05-03 | 2017-05-04 |  |
| 4 |  | Get Wakamma server/client to run in Linux | 2d | 2017-05-03 | 2017-05-04 | -100% |
| 5 | 1.1.2 | **Device** | 28d | 2017-05-03 | 2017-05-30 | 4% |
| 6 |  | Get imx6 SabreLite Nucleus up and running (with ethernet) | 2d | 2017-05-03 | 2017-05-04 | 100% |
| 7 | 1.1.2.2 | **Port Wakamma client to Nucleus** | 5d | 2017-05-08 | 2017-05-12 |  |
| 8 |  | Use Wakamma CoAP implementation | 5d | 2017-05-08 | 2017-05-12 |  |
| 9 |  | Validate against wakama server on linux machine | 2d | 2017-05-08 | 2017-05-09 |  |
| 10 | 1.1.2.4 | **Device Agent** | 23d | 2017-05-08 | 2017-05-30 |  |
| 11 |  | Create Device Agent | 2d | 2017-05-08 | 2017-05-09 |  |
| 12 |  | Add firmware update capability to Device Agent | 2d | 2017-05-10 | 2017-05-11 |  |
| 13 |  | Add Nucleus-based bootloader for SabreLite and logistics for firmware / application updates | 7d | 2017-05-12 | 2017-05-18 |  |
| 14 |  | Protect boot.ini (decrypt / encrypt) | 4d | 2017-05-19 | 2017-05-22 |  |
| 15 |  | Create Certificate validation routine | 2d | 2017-05-23 | 2017-05-24 |  |
| 16 |  | Hawkbit integration into DM agent | 6d | 2017-05-25 | 2017-05-30 |  |
| 17 |  | Create spoofed sensor data stream | 1d | 2017-05-08 | 2017-05-08 |  |
| 18 | 1.1.3 | **Server** | 4d | 2017-05-02 | 2017-05-05 | 100% |
| 19 |  | Get VM image on windows guest with Leshan running | 3d | 2017-05-02 | 2017-05-04 | 100% |
| 20 |  | Create VM image based on Ubuntu 16.04 | 2d | 2017-05-03 | 2017-05-04 | 100% |
| 21 |  | Validate VM image against Zephyr node | 2d | 2017-05-03 | 2017-05-04 | 100% |
| 22 |  | Integrate Wakamma server demo UI into Leshan | 3d | 2017-05-03 | 2017-05-05 | 100% |
| 23 |  | Extend object model | 2d | 2017-05-04 | 2017-05-05 | 100% |
| 24 |  | Create Integrated UI for HawkBit and Leshan | 4d | 2017-05-02 | 2017-05-05 | 100% |
| 25 |  | Add HawkBit to VM | 2d | 2017-05-03 | 2017-05-04 | 100% |
| 26 |  | Device authentication | 2d | 2017-05-03 | 2017-05-04 | 100% |
| 27 | 1.1.4 | **Signing Tool** | 2d | 2017-05-03 | 2017-05-04 | 100% |
| 28 |  | Identify OSS tool for generation of certificates | 2d | 2017-05-03 | 2017-05-04 | 100% |
| 29 |  | Create host/server side signing tools | 2d | 2017-05-03 | 2017-05-04 | 100% |
| 30 | 1.1.5 | **Integration Use Cases** | 11d | 2017-05-08 | 2017-05-18 |  |
| 31 |  | Write client side demo to showcase below use cases | 4d | 2017-05-08 | 2017-05-11 |  |
| 32 |  | Write server side demo to showcase above use cases (assumption of no work so buffer amount) | 5d | 2017-05-12 | 2017-05-16 |  |
| 33 | 1.1.6 | **Documentation** | 12d | 2017-05-08 | 2017-05-19 |  |
| 34 |  | Documentation of the use cases for demonstration | 1d | 2017-05-08 | 2017-05-08 |  |
| 35 |  | Documentation of the use cases for demonstration | 1d | 2017-05-09 | 2017-05-09 |  |

## Version 2 (saved 2017-05-12)

Note of the change: ff

Last finish 2017-05-30 → 2017-05-19 (-11d). Complete tasks 11 → 16.

Changed:

| ID | Task | Start | Finish | Duration | Complete | Other |
| --- | --- | --- | --- | --- | --- | --- |
| 1 | **Project** |  | 2017-05-30 → 2017-05-19 (-11d) | 29d → 18d | 42% → 74% |  |
| 2 | **WeatherFord Eval** |  | 2017-05-30 → 2017-05-19 (-11d) | 29d → 18d | 42% → 74% | was named Weather ford Eval |
| 5 | **Device** |  | 2017-05-30 → 2017-05-19 (-11d) | 28d → 17d | 4% → 68% |  |
| 7 | **Port Wakamma client to Nucleus** | 2017-05-08 → 2017-05-07 (-1d) | 2017-05-12 → 2017-05-11 (-1d) |  | 0% → 100% |  |
| 8 | Use Wakamma CoAP implementation | 2017-05-08 → 2017-05-07 (-1d) | 2017-05-12 → 2017-05-11 (-1d) |  | 0% → 100% |  |
| 9 | Validate against wakama server on linux machine | 2017-05-08 → 2017-05-10 (+2d) | 2017-05-09 → 2017-05-11 (+2d) |  | 0% → 100% |  |
| 10 | **Device Agent** | 2017-05-08 → 2017-05-09 (+1d) | 2017-05-30 → 2017-05-19 (-11d) | 23d → 11d | 0% → 56% |  |
| 11 | Create Device Agent | 2017-05-08 → 2017-05-11 (+3d) | 2017-05-09 → 2017-05-12 (+3d) |  |  |  |
| 12 | Add firmware update capability to Device Agent | 2017-05-10 → 2017-05-09 (-1d) | 2017-05-11 → 2017-05-09 (-2d) | 2d → 1d | 0% → 100% |  |
| 13 | Add Nucleus-based bootloader for SabreLite and logistics for firmware / application updates | 2017-05-12 → 2017-05-09 (-3d) | 2017-05-18 → 2017-05-15 (-3d) |  | 0% → 80% |  |
| 14 | Protect boot.ini (decrypt / encrypt) | 2017-05-19 → 2017-05-09 (-10d) | 2017-05-22 → 2017-05-09 (-13d) | 4d → 1d | 0% → 100% |  |
| 15 | Create Certificate validation routine | 2017-05-23 → 2017-05-09 (-14d) | 2017-05-24 → 2017-05-09 (-15d) | 2d → 1d | 0% → 100% |  |
| 16 | Hawkbit integration into DM agent | 2017-05-25 → 2017-05-16 (-9d) | 2017-05-30 → 2017-05-19 (-11d) | 6d → 4d |  |  |
| 17 | Create spoofed sensor data stream | 2017-05-08 → 2017-05-11 (+3d) | 2017-05-08 → 2017-05-11 (+3d) |  |  |  |
| 18 | **Server** |  | 2017-05-05 → 2017-05-09 (+4d) | 4d → 8d |  |  |
| 22 | Integrate Wakamma server demo UI into Leshan | 2017-05-03 → 2017-05-09 (+6d) | 2017-05-05 → 2017-05-09 (+4d) | 3d → 1d |  |  |
| 23 | Extend object model | 2017-05-04 → 2017-05-09 (+5d) | 2017-05-05 → 2017-05-09 (+4d) | 2d → 1d |  |  |
| 24 | Create Integrated UI for HawkBit and Leshan | 2017-05-02 → 2017-05-09 (+7d) | 2017-05-05 → 2017-05-09 (+4d) | 4d → 1d |  |  |
| 30 | **Integration Use Cases** | 2017-05-08 → 2017-05-11 (+3d) | 2017-05-18 → 2017-05-19 (+1d) | 11d → 9d |  |  |
| 31 | Write client side demo to showcase below use cases | 2017-05-08 → 2017-05-11 (+3d) | 2017-05-11 → 2017-05-16 (+5d) | 4d → 6d |  |  |
| 32 | Write server side demo to showcase above use cases (assumption of no work so buffer amount) | 2017-05-12 → 2017-05-17 (+5d) | 2017-05-16 → 2017-05-19 (+3d) | 5d → 3d |  |  |
| 33 | **Documentation** | 2017-05-08 → 2017-05-11 (+3d) |  | 12d → 9d |  |  |
| 34 | Documentation of the use cases for demonstration | 2017-05-08 → 2017-05-11 (+3d) | 2017-05-08 → 2017-05-11 (+3d) |  |  |  |
| 35 | Documentation of the use cases for demonstration | 2017-05-09 → 2017-05-12 (+3d) | 2017-05-09 → 2017-05-12 (+3d) |  |  |  |
